# Decor Marketing Application

Schedule from MS Project, 2012-02-03 to 2012-04-26.

## Calendars

- Standard: Mon-Fri 08:00-12:00, 13:00-17:00; Sat-Sun off.

## Schedule

| ID | WBS | Task | Duration | Start | Finish | Predecessors | Total slack | Free slack | Work |
| --- | --- | --- | --- | --- | --- | --- | --- | --- | --- |
| 1 | 1 | **[CLIENT] Marketing Application** | 59.81d? | 2012-02-03 08:00 | 2012-04-26 15:30 |  |  |  | 1412h |
| 2 | 1.1 | **Development Environment Setup and Integration** | 10d | 2012-02-03 08:00 | 2012-02-16 17:00 |  | 0d |  | 136.5h |
| 3 | 1.1.1 | **[CLIENT] Corporate Environment** | 0.56d | 2012-02-03 08:00 | 2012-02-03 13:30 |  | 8.38d | 0d | 24h |
| 4 | 1.1.1.1 | Obtain Required Software | 2h | 2012-02-03 08:00 | 2012-02-03 10:00 |  | 8.38d | 0d | 2h |
| 5 | 1.1.1.2 | Familiarize with [CLIENT] Coding Standards | 1h | 2012-02-03 08:00 | 2012-02-03 09:00 |  | 8.81d |  | 4h |
| 6 | 1.1.1.3 | **VPN** | 0.12d | 2012-02-03 10:00 | 2012-02-03 11:00 | 4 | 8.38d | 0d | 4h |
| 7 | 1.1.1.3.1 | Installation | 0.5h | 2012-02-03 10:00 | 2012-02-03 10:30 |  | 8.38d | 0d | 2h |
| 8 | 1.1.1.3.2 | Verify Connectivity | 0.5h | 2012-02-03 10:30 | 2012-02-03 11:00 | 7 | 8.38d |  | 2h |
| 9 | 1.1.1.4 | **Source Control** | 0.19d | 2012-02-03 11:00 | 2012-02-03 13:30 | 6, 4 | 8.38d |  | 6h |
| 10 | 1.1.1.4.1 | Installation | 0.5h | 2012-02-03 11:00 | 2012-02-03 11:30 |  | 8.38d | 0d | 2h |
| 11 | 1.1.1.4.2 | Configuration | 0.5h | 2012-02-03 11:30 | 2012-02-03 12:00 | 10 | 8.38d | 0d | 2h |
| 12 | 1.1.1.4.3 | Verify Connectivity | 0.5h | 2012-02-03 13:00 | 2012-02-03 13:30 | 11 | 8.38d |  | 2h |
| 13 | 1.1.1.5 | **Database** | 0.19d | 2012-02-03 11:00 | 2012-02-03 13:30 | 6, 4 | 8.38d |  | 6h |
| 14 | 1.1.1.5.1 | Verify Connectivity | 0.5h | 2012-02-03 11:00 | 2012-02-03 11:30 |  | 8.38d | 0d | 2h |
| 15 | 1.1.1.5.2 | Familiarize with Shared Database Structures and Development Patterns | 1h | 2012-02-03 11:30 | 2012-02-03 13:30 | 6, 14 | 8.38d |  | 4h |
| 16 | 1.1.1.6 | **Web Servers** | 0.06d | 2012-02-03 08:00 | 2012-02-03 08:30 |  | 8.88d |  | 2h |
| 17 | 1.1.1.6.1 | Verify Connectivity | 0.5h | 2012-02-03 08:00 | 2012-02-03 08:30 |  | 8.88d |  | 2h |
| 18 | 1.1.2 | **Search Engine** | 1.5d | 2012-02-03 08:00 | 2012-02-06 12:00 |  | 8.5d |  | 12h |
| 19 | 1.1.2.1 | Obtain Access Credentials | 0.5h | 2012-02-03 08:00 | 2012-02-03 08:30 |  | 8.5d | 0d | 0.5h |
| 20 | 1.1.2.2 | Verify Connectivity And Configuration | 0.5h | 2012-02-03 08:30 | 2012-02-03 09:00 | 19 | 9d | 0d | 0.5h |
| 21 | 1.1.2.3 | Product Schema Design | 8h | 2012-02-03 09:00 | 2012-02-06 09:00 | 20 | 8.5d | 0d | 8h |
| 22 | 1.1.2.4 | Product Schema Configuration | 1.5h | 2012-02-06 09:00 | 2012-02-06 10:30 | 21 | 8.5d | 0d | 1.5h |
| 23 | 1.1.2.5 | Configure Facets and Aliases | 1.5h | 2012-02-06 10:30 | 2012-02-06 12:00 | 22 | 8.5d |  | 1.5h |
| 24 | 1.1.3 | **Content Management Engine** | 10d | 2012-02-03 08:00 | 2012-02-16 17:00 |  | 0d |  | 80h |
| 25 | 1.1.3.1 | Familiarization with the Available Features | 40h | 2012-02-03 08:00 | 2012-02-09 17:00 |  | 0d |  | 40h |
| 26 | 1.1.3.2 | Review of Extensibility Points, API, and Available Modules | 40h | 2012-02-10 08:00 | 2012-02-16 17:00 | 25 | 0d |  | 40h |

Notes:
- 3: These tasks are required for each developer on the project. Four resources are assumed - three general developers and one front-end developer.
- 6: The [CLIENT] and [DEVELOPER] VPN software are able to coexist on the same machine.
- 9: ·Team Foundation Server is being used for solution and database-related source control.
- 13: ·SQL Server 2008 R2 is being used. / ·The server environment has been configured by [CLIENT] IT. / ·A database for the project has already been created and configured by [CLIENT] IT. / ·The application database supports multi-byte characters. / ·Access has been granted to [DEVELOPER] developers as appropriate.
- 16: The server environment has been configured by [CLIENT] IT.
- 18: ·Browse and Search capabilities are product-based, with results constrained to product data only. / ·Solr is being utilized as the search engine. / ·Sorting will be performed only by relevance or by a single product attribute at a time.
- 24: The installation of the CMS application will be performed by the [CLIENT] IT team....

| ID | WBS | Task | Type | Duration | Start | Finish | Predecessors | Total slack | Free slack | Work |
| --- | --- | --- | --- | --- | --- | --- | --- | --- | --- | --- |
| 27 | 1.1.4 | **Solution** |  | 0.5d | 2012-02-03 13:30 | 2012-02-06 08:30 | 3 | 8.38d | 0d | 16h |
| 28 | 1.1.4.1 | Retrieve initial solution structure from source control |  | 1h | 2012-02-03 13:30 | 2012-02-03 14:30 | 3 | 8.38d | 0d | 4h |
| 29 | 1.1.4.2 | Verify the ability to build and debug the solution |  | 1h | 2012-02-03 14:30 | 2012-02-03 15:30 | 28 | 8.38d | 0d | 4h |
| 30 | 1.1.4.3 | Familiarize with the project structure and Décor architectural patterns |  | 2h | 2012-02-03 15:30 | 2012-02-06 08:30 | 29 | 8.38d |  | 8h |
| 31 | 1.1.5 | **Marketing Site Projects** |  | 0.56d | 2012-02-06 08:30 | 2012-02-06 14:00 | 27, 3 | 8.38d |  | 4.5h |
| 32 | 1.1.5.1 | Create and Configure Marketing Website Project in the Solution |  | 1.5h | 2012-02-06 08:30 | 2012-02-06 10:00 |  | 8.38d | 0d | 1.5h |
| 33 | 1.1.5.2 | Create and Configure Administrative Website Project in the Solution |  | 1.5h | 2012-02-06 10:00 | 2012-02-06 11:30 | 32 | 8.38d | 0d | 1.5h |
| 34 | 1.1.5.3 | Create and Configure Product Feed Project in the Solution |  | 1.5h | 2012-02-06 11:30 | 2012-02-06 14:00 | 33 | 8.38d |  | 1.5h |
| 35 | 1.2 | **Account Management** |  | 1d | 2012-02-03 13:30 | 2012-02-06 13:30 | 3 | 21.69d | 8.44d | 19h |
| 36 | 1.2.1 | **User Login** |  | 0.5d | 2012-02-03 13:30 | 2012-02-06 08:30 |  | 22.19d |  | 4h |
| 37 | 1.2.1.1 | Architecture & Design |  | 0.5h | 2012-02-03 13:30 | 2012-02-03 14:00 |  | 22.19d | 0d | 0.5h |
| 38 | 1.2.1.2 | Database Implementation |  | 1h | 2012-02-03 14:00 | 2012-02-03 15:00 | 37 | 22.19d | 0d | 1h |
| 39 | 1.2.1.3 | Implementation |  | 1h | 2012-02-03 15:00 | 2012-02-03 16:00 | 38 | 22.19d | 0d | 1h |
| 40 | 1.2.1.4 | Code Review | milestone | 0h | 2012-02-03 16:00 | 2012-02-03 16:00 | 39 | 22.19d | 0d |  |
| 41 | 1.2.1.5 | Unit Testing |  | 1h | 2012-02-03 16:00 | 2012-02-03 17:00 | 40 | 22.19d | 0d | 1h |
| 42 | 1.2.1.6 | Integration Testing |  | 0.5h | 2012-02-06 08:00 | 2012-02-06 08:30 | 41 | 22.19d | 0d | 0.5h |
| 43 | 1.2.1.7 | QA / Bug Fixes | milestone | 0h | 2012-02-06 08:30 | 2012-02-06 08:30 | 42 | 22.19d |  |  |
| 44 | 1.2.2 | **Account Creation** |  | 1d | 2012-02-03 13:30 | 2012-02-06 13:30 |  | 21.69d |  | 8h |
| 45 | 1.2.2.1 | Architecture & Design |  | 1h | 2012-02-03 13:30 | 2012-02-03 14:30 |  | 21.69d | 0d | 1h |
| 46 | 1.2.2.2 | Database Implementation |  | 1h | 2012-02-03 14:30 | 2012-02-03 15:30 | 45 | 21.69d | 0d | 1h |
| 47 | 1.2.2.3 | Implementation |  | 3h | 2012-02-03 15:30 | 2012-02-06 09:30 | 46 | 21.69d | 0d | 3h |
| 48 | 1.2.2.4 | Code Review | milestone | 0h | 2012-02-06 09:30 | 2012-02-06 09:30 | 47 | 21.69d | 0d |  |
| 49 | 1.2.2.5 | Unit Testing |  | 1h | 2012-02-06 09:30 | 2012-02-06 10:30 | 48 | 21.69d | 0d | 1h |
| 50 | 1.2.2.6 | Integration Testing |  | 2h | 2012-02-06 10:30 | 2012-02-06 13:30 | 49 | 21.69d | 0d | 2h |
| 51 | 1.2.2.7 | QA / Bug Fixes | milestone | 0h | 2012-02-06 13:30 | 2012-02-06 13:30 | 50 | 21.69d |  |  |

Notes:
- 27: These tasks are required for each developer on the project. Four resources are assumed - three general developers and one front-end developer.
- 28: The solution is available in the appropriate source control branch.
- 35: The [CLIENT] solution has a base user profile established....
- 44: Account creation will gather user details and integrate with the administrative action items for manual attention by a [CLIENT] representative.

| ID | WBS | Task | Type | Duration | Start | Finish | Predecessors | Total slack | Free slack | Work |
| --- | --- | --- | --- | --- | --- | --- | --- | --- | --- | --- |
| 52 | 1.2.3 | **Password Reset** |  | 0.5d | 2012-02-03 13:30 | 2012-02-06 08:30 |  | 22.19d |  | 4h |
| 53 | 1.2.3.1 | Architecture & Design |  | 0.5h | 2012-02-03 13:30 | 2012-02-03 14:00 |  | 22.19d | 0d | 0.5h |
| 54 | 1.2.3.2 | Database Implementation | milestone | 0h | 2012-02-03 14:00 | 2012-02-03 14:00 | 53 | 22.19d | 0d |  |
| 55 | 1.2.3.3 | Implementation |  | 1.5h | 2012-02-03 14:00 | 2012-02-03 15:30 | 54 | 22.19d | 0d | 1.5h |
| 56 | 1.2.3.4 | Code Review | milestone | 0h | 2012-02-03 15:30 | 2012-02-03 15:30 | 55 | 22.19d | 0d |  |
| 57 | 1.2.3.5 | Unit Testing |  | 1h | 2012-02-03 15:30 | 2012-02-03 16:30 | 56 | 22.19d | 0d | 1h |
| 58 | 1.2.3.6 | Integration Testing |  | 1h | 2012-02-03 16:30 | 2012-02-06 08:30 | 57 | 22.19d | 0d | 1h |
| 59 | 1.2.3.7 | QA / Bug Fixes | milestone | 0h | 2012-02-06 08:30 | 2012-02-06 08:30 | 58 | 22.19d |  |  |
| 60 | 1.2.4 | **User Favorite Products** |  | 0.38d | 2012-02-03 13:30 | 2012-02-03 16:30 |  | 22.31d |  | 3h |
| 61 | 1.2.4.1 | Architecture & Design | milestone | 0h | 2012-02-03 13:30 | 2012-02-03 13:30 |  | 22.31d | 0d |  |
| 62 | 1.2.4.2 | Database Implementation |  | 1h | 2012-02-03 13:30 | 2012-02-03 14:30 | 61 | 22.31d | 0d | 1h |
| 63 | 1.2.4.3 | Implementation |  | 1h | 2012-02-03 14:30 | 2012-02-03 15:30 | 62 | 22.31d | 0d | 1h |
| 64 | 1.2.4.4 | Code Review | milestone | 0h | 2012-02-03 15:30 | 2012-02-03 15:30 | 63 | 22.31d | 0d |  |
| 65 | 1.2.4.5 | Unit Testing |  | 1h | 2012-02-03 15:30 | 2012-02-03 16:30 | 64 | 22.31d | 0d | 1h |
| 66 | 1.2.4.6 | Integration Testing | milestone | 0h | 2012-02-03 16:30 | 2012-02-03 16:30 | 65 | 22.31d | 0d |  |
| 67 | 1.2.4.7 | QA / Bug Fixes | milestone | 0h | 2012-02-03 16:30 | 2012-02-03 16:30 | 66 | 22.31d |  |  |
| 68 | 1.3 | **Product Management** |  | 3.88d | 2012-02-17 08:00 | 2012-02-22 16:00 | 2 | 0d |  | 67h |
| 69 | 1.3.1 | **Service Endpoints** |  | 0.62d | 2012-02-17 08:00 | 2012-02-17 14:00 |  | 0d |  | 5h |
| 70 | 1.3.1.1 | Architecture & Design |  | 1h | 2012-02-17 08:00 | 2012-02-17 09:00 |  | 0d |  | 1h |
| 71 | 1.3.1.2 | Database Implementation | milestone | 0h | 2012-02-17 09:00 | 2012-02-17 09:00 | 70 | 0d |  |  |
| 72 | 1.3.1.3 | Implementation |  | 3h | 2012-02-17 09:00 | 2012-02-17 12:00 | 71 | 0d |  | 3h |
| 73 | 1.3.1.4 | Code Review | milestone | 0h | 2012-02-17 12:00 | 2012-02-17 12:00 | 72 | 0d |  |  |
| 74 | 1.3.1.5 | Unit Testing |  | 1h | 2012-02-17 13:00 | 2012-02-17 14:00 | 73 | 0d |  | 1h |
| 75 | 1.3.1.6 | Integration Testing | milestone | 0h | 2012-02-17 14:00 | 2012-02-17 14:00 | 74 | 0d |  |  |
| 76 | 1.3.1.7 | QA / Bug Fixes | milestone | 0h | 2012-02-17 14:00 | 2012-02-17 14:00 | 75 | 0d |  |  |

Notes:
- 52: ·This task will be responsible for generation of a new password and email communication with the end user. / ·Interaction with the profile will take place through the existing service endpoints. It is assumed that support is present for password updates. / ·[CLIENT] has an SMTP server or mail service available for integration. / ·One-time reset passwords are sent via plan text email.
- 69: Required. Serve as the point of interaction to allow the marketing and administrative websites to interact with product data and the associated marketing extensions.

| ID | WBS | Task | Type | Duration | Start | Finish | Predecessors | Total slack | Free slack | Work |
| --- | --- | --- | --- | --- | --- | --- | --- | --- | --- | --- |
| 77 | 1.3.2 | **Product Normalization** |  | 3.25d | 2012-02-17 14:00 | 2012-02-22 16:00 | 69 | 0d |  | 34h |
| 78 | 1.3.2.1 | Architecture & Design |  | 8h | 2012-02-17 14:00 | 2012-02-20 14:00 |  | 0d |  | 8h |
| 79 | 1.3.2.2 | Database Implementation |  | 8h | 2012-02-20 14:00 | 2012-02-21 14:00 | 78 | 1.25d |  | 8h |
| 80 | 1.3.2.3 | CMS Implementation |  | 4h | 2012-02-20 14:00 | 2012-02-21 09:00 | 78 | 0d |  | 4h |
| 81 | 1.3.2.4 | Code Review |  | 2h | 2012-02-21 09:00 | 2012-02-21 11:00 | 80 | 0d |  | 2h |
| 82 | 1.3.2.5 | Unit Testing |  | 6h | 2012-02-21 11:00 | 2012-02-22 09:00 | 81 | 0d |  | 6h |
| 83 | 1.3.2.6 | Integration Testing |  | 6h | 2012-02-22 09:00 | 2012-02-22 16:00 | 82 | 0d |  | 6h |
| 84 | 1.3.2.7 | QA / Bug Fixes | milestone | 0h | 2012-02-22 16:00 | 2012-02-22 16:00 | 83 | 0d |  |  |
| 85 | 1.3.3 | **Product Attribute Extensions** |  | 0.88d | 2012-02-17 14:00 | 2012-02-20 12:00 | 69 | 2.38d |  | 8h |
| 86 | 1.3.3.1 | Architecture & Design |  | 2h | 2012-02-17 14:00 | 2012-02-17 16:00 |  | 2.38d | 0d | 2h |
| 87 | 1.3.3.2 | Database Implementation |  | 1h | 2012-02-17 16:00 | 2012-02-17 17:00 | 86 | 2.88d |  | 1h |
| 88 | 1.3.3.3 | CMS Implementation |  | 2h | 2012-02-17 16:00 | 2012-02-20 09:00 | 86 | 2.38d | 0d | 2h |
| 89 | 1.3.3.4 | Code Review | milestone | 0h | 2012-02-20 09:00 | 2012-02-20 09:00 | 88 | 2.38d | 0d |  |
| 90 | 1.3.3.5 | Unit Testing |  | 2h | 2012-02-20 09:00 | 2012-02-20 11:00 | 89 | 2.38d | 0d | 2h |
| 91 | 1.3.3.6 | Integration Testing |  | 1h | 2012-02-20 11:00 | 2012-02-20 12:00 | 90 | 2.38d | 0d | 1h |
| 92 | 1.3.3.7 | QA / Bug Fixes | milestone | 0h | 2012-02-20 12:00 | 2012-02-20 12:00 | 91 | 2.38d |  |  |
| 93 | 1.3.4 | **Category Taxonomy** |  | 1.12d | 2012-02-17 08:00 | 2012-02-20 09:00 |  | 2.75d |  | 9h |
| 94 | 1.3.4.1 | Architecture & Design |  | 1h | 2012-02-17 08:00 | 2012-02-17 09:00 |  | 2.75d | 0d | 1h |
| 95 | 1.3.4.2 | Database Implementation |  | 1h | 2012-02-17 09:00 | 2012-02-17 10:00 | 94 | 2.75d | 0d | 1h |
| 96 | 1.3.4.3 | Implementation |  | 4h | 2012-02-17 10:00 | 2012-02-17 15:00 | 95 | 2.75d | 0d | 4h |
| 97 | 1.3.4.4 | Code Review | milestone | 0h | 2012-02-17 15:00 | 2012-02-17 15:00 | 96 | 2.75d | 0d |  |
| 98 | 1.3.4.5 | Unit Testing |  | 2h | 2012-02-17 15:00 | 2012-02-17 17:00 | 97 | 2.75d | 0d | 2h |
| 99 | 1.3.4.6 | Integration Testing |  | 1h | 2012-02-20 08:00 | 2012-02-20 09:00 | 98 | 2.75d | 0d | 1h |
| 100 | 1.3.4.7 | QA / Bug Fixes | milestone | 0h | 2012-02-20 09:00 | 2012-02-20 09:00 | 99 | 2.75d |  |  |

Notes:
- 77: Allows for integration of the core product data, pure color data, core marketing materials data, marketing extensions, and search engine product schema into a normalized form that can be consumed from within the marketing and administrative websites. / Incorporation of child styles is also supported by this task.
- 81: Due to tight integration with complex core product data, this area will need to be formally reviewed with the [CLIENT]e development team.
- 85: Includes support for - / ·Arbitrary name/value keys / ·Workflow status / ·Product-To-Product relationships
- 93: ·Marketing specific categorization will be needed to organize products; the data does not exist in a usable form within the core product data. / ·A product may be associated with zero or more categories. / ·Category creation/deletion has a cascading effect on an accompanying dynamic page.

| ID | WBS | Task | Type | Duration | Start | Finish | Predecessors | Total slack | Free slack | Work |
| --- | --- | --- | --- | --- | --- | --- | --- | --- | --- | --- |
| 101 | 1.3.5 | **Facets** |  | 1.38d | 2012-02-17 14:00 | 2012-02-20 17:00 | 69 | 1.88d |  | 11h |
| 102 | 1.3.5.1 | Architecture & Design |  | 1h | 2012-02-17 14:00 | 2012-02-17 15:00 |  | 1.88d | 0d | 1h |
| 103 | 1.3.5.2 | Database Implementation |  | 1h | 2012-02-17 15:00 | 2012-02-17 16:00 | 102 | 1.88d | 0d | 1h |
| 104 | 1.3.5.3 | CMS Implementation |  | 2h | 2012-02-17 16:00 | 2012-02-20 09:00 | 103 | 1.88d | 0d | 2h |
| 105 | 1.3.5.4 | Implementation |  | 4h | 2012-02-20 09:00 | 2012-02-20 14:00 | 104 | 1.88d | 0d | 4h |
| 106 | 1.3.5.5 | Code Review | milestone | 0h | 2012-02-20 14:00 | 2012-02-20 14:00 | 105 | 1.88d | 0d |  |
| 107 | 1.3.5.6 | Unit Testing |  | 2h | 2012-02-20 14:00 | 2012-02-20 16:00 | 106 | 1.88d | 0d | 2h |
| 108 | 1.3.5.7 | Integration Testing |  | 1h | 2012-02-20 16:00 | 2012-02-20 17:00 | 107 | 1.88d | 0d | 1h |
| 109 | 1.3.5.8 | QA / Bug Fixes | milestone | 0h | 2012-02-20 17:00 | 2012-02-20 17:00 | 108 | 1.88d |  |  |
| 110 | 1.4 | **User Communication Management** |  | 1d | 2012-02-17 08:00 | 2012-02-17 17:00 | 2, 35 | 13.25d | 5.25d | 24h |
| 111 | 1.4.1 | **Service Endpoints** |  | 0.5d | 2012-02-17 08:00 | 2012-02-17 12:00 |  | 13.75d |  | 4h |
| 112 | 1.4.1.1 | Architecture & Design |  | 1h | 2012-02-17 08:00 | 2012-02-17 09:00 |  | 13.75d | 0d | 1h |
| 113 | 1.4.1.2 | Database Implementation | milestone | 0h | 2012-02-17 09:00 | 2012-02-17 09:00 | 112 | 13.75d | 0d |  |
| 114 | 1.4.1.3 | Implementation |  | 2h | 2012-02-17 09:00 | 2012-02-17 11:00 | 113 | 13.75d | 0d | 2h |
| 115 | 1.4.1.4 | Code Review | milestone | 0h | 2012-02-17 11:00 | 2012-02-17 11:00 | 114 | 13.75d | 0d |  |
| 116 | 1.4.1.5 | Unit Testing |  | 1h | 2012-02-17 11:00 | 2012-02-17 12:00 | 115 | 13.75d | 0d | 1h |
| 117 | 1.4.1.6 | Integration Testing | milestone | 0h | 2012-02-17 12:00 | 2012-02-17 12:00 | 116 | 13.75d | 0d |  |
| 118 | 1.4.1.7 | QA / Bug Fixes | milestone | 0h | 2012-02-17 12:00 | 2012-02-17 12:00 | 117 | 13.75d |  |  |
| 119 | 1.4.2 | **Contact Us** |  | 0.5d | 2012-02-17 08:00 | 2012-02-17 12:00 |  | 13.75d |  | 4h |
| 120 | 1.4.2.1 | Architecture & Design |  | 0.5h | 2012-02-17 08:00 | 2012-02-17 08:30 |  | 13.75d | 0d | 0.5h |
| 121 | 1.4.2.2 | Database Implementation |  | 1h | 2012-02-17 08:30 | 2012-02-17 09:30 | 120 | 13.75d | 0d | 1h |
| 122 | 1.4.2.3 | Implementation |  | 1h | 2012-02-17 09:30 | 2012-02-17 10:30 | 121 | 13.75d | 0d | 1h |
| 123 | 1.4.2.4 | Code Review | milestone | 0h | 2012-02-17 10:30 | 2012-02-17 10:30 | 122 | 13.75d | 0d |  |
| 124 | 1.4.2.5 | Unit Testing |  | 1h | 2012-02-17 10:30 | 2012-02-17 11:30 | 123 | 13.75d | 0d | 1h |
| 125 | 1.4.2.6 | Integration Testing |  | 0.5h | 2012-02-17 11:30 | 2012-02-17 12:00 | 124 | 13.75d | 0d | 0.5h |
| 126 | 1.4.2.7 | QA / Bug Fixes | milestone | 0h | 2012-02-17 12:00 | 2012-02-17 12:00 | 125 | 13.75d |  |  |

Notes:
- 101: ·Marketing specific attributes for a product will need to be tracked. / ·Facets are integrated with the search engine and used for providing drill-down filtering. / ·A facet has a list of specific values which can be applied to a product. / ·Products may have zero or more values for a given facet associated with them. / ·Facet creation/deletion has a cascading effect on an accompanying dynamic page.
- 111: Required. Serve as the point of interaction to allow the marketing and administrative websites to interact with user communication functionality.
- 119: ·Contact submission is integrated with the Action Items administration feature. / ·Contact requests are not tracked against the user profile. / ·No logging or auditing is needed.

| ID | WBS | Task | Type | Duration | Start | Finish | Predecessors | Total slack | Free slack | Work |
| --- | --- | --- | --- | --- | --- | --- | --- | --- | --- | --- |
| 127 | 1.4.3 | **Request Referral** |  | 0.5d | 2012-02-17 08:00 | 2012-02-17 12:00 |  | 13.75d |  | 4h |
| 128 | 1.4.3.1 | Architecture & Design |  | 0.5h | 2012-02-17 08:00 | 2012-02-17 08:30 |  | 13.75d | 0d | 0.5h |
| 129 | 1.4.3.2 | Database Implementation |  | 1h | 2012-02-17 08:30 | 2012-02-17 09:30 | 128 | 13.75d | 0d | 1h |
| 130 | 1.4.3.3 | Implementation |  | 1h | 2012-02-17 09:30 | 2012-02-17 10:30 | 129 | 13.75d | 0d | 1h |
| 131 | 1.4.3.4 | Code Review | milestone | 0h | 2012-02-17 10:30 | 2012-02-17 10:30 | 130 | 13.75d | 0d |  |
| 132 | 1.4.3.5 | Unit Testing |  | 0.5h | 2012-02-17 10:30 | 2012-02-17 11:00 | 131 | 13.75d | 0d | 0.5h |
| 133 | 1.4.3.6 | Integration Testing |  | 1h | 2012-02-17 11:00 | 2012-02-17 12:00 | 132 | 13.75d | 0d | 1h |
| 134 | 1.4.3.7 | QA / Bug Fixes | milestone | 0h | 2012-02-17 12:00 | 2012-02-17 12:00 | 133 | 13.75d |  |  |
| 135 | 1.4.4 | **Locate A Sales Representative** |  | 1d | 2012-02-17 08:00 | 2012-02-17 17:00 |  | 13.25d |  | 8h |
| 136 | 1.4.4.1 | Architecture & Design |  | 2h | 2012-02-17 08:00 | 2012-02-17 10:00 |  | 13.25d | 0d | 2h |
| 137 | 1.4.4.2 | Database Implementation |  | 1h | 2012-02-17 10:00 | 2012-02-17 11:00 | 136 | 13.25d | 0d | 1h |
| 138 | 1.4.4.3 | Implementation |  | 4h | 2012-02-17 11:00 | 2012-02-17 16:00 | 137 | 13.25d | 0d | 4h |
| 139 | 1.4.4.4 | Code Review | milestone | 0h | 2012-02-17 16:00 | 2012-02-17 16:00 | 138 | 13.25d | 0d |  |
| 140 | 1.4.4.5 | Unit Testing |  | 1h | 2012-02-17 16:00 | 2012-02-17 17:00 | 139 | 13.25d | 0d | 1h |
| 141 | 1.4.4.6 | Integration Testing | milestone | 0h | 2012-02-17 17:00 | 2012-02-17 17:00 | 140 | 13.25d | 0d |  |
| 142 | 1.4.4.7 | QA / Bug Fixes | milestone | 0h | 2012-02-17 17:00 | 2012-02-17 17:00 | 141 | 13.25d |  |  |
| 143 | 1.4.5 | **Request a Pricing Guide** |  | 0.5d | 2012-02-17 08:00 | 2012-02-17 12:00 |  | 13.75d |  | 4h |
| 144 | 1.4.5.1 | Architecture & Design |  | 0.5h | 2012-02-17 08:00 | 2012-02-17 08:30 |  | 13.75d | 0d | 0.5h |
| 145 | 1.4.5.2 | Database Implementation |  | 0.5h | 2012-02-17 08:30 | 2012-02-17 09:00 | 144 | 13.75d | 0d | 0.5h |
| 146 | 1.4.5.3 | Implementation |  | 1h | 2012-02-17 09:00 | 2012-02-17 10:00 | 145 | 13.75d | 0d | 1h |
| 147 | 1.4.5.4 | Code Review | milestone | 0h | 2012-02-17 10:00 | 2012-02-17 10:00 | 146 | 13.75d | 0d |  |
| 148 | 1.4.5.5 | Unit Testing |  | 1h | 2012-02-17 10:00 | 2012-02-17 11:00 | 147 | 13.75d | 0d | 1h |
| 149 | 1.4.5.6 | Integration Testing |  | 1h | 2012-02-17 11:00 | 2012-02-17 12:00 | 148 | 13.75d | 0d | 1h |
| 150 | 1.4.5.7 | QA / Bug Fixes | milestone | 0h | 2012-02-17 12:00 | 2012-02-17 12:00 | 149 | 13.75d |  |  |

Notes:
- 127: ·Referral requests are integrated with the Action Items administration feature. / ·Referral requests are not tracked against the user profile. / ·Referral requests will be logged at the database level for audit purposes.
- 135: [CLIENT] has an SMTP server or mail service available for integration....
- 143: There is an existing [CLIENT] process for fulfilling pricing guide requests....

| ID | WBS | Task | Type | Duration | Start | Finish | Predecessors | Total slack | Free slack | Work |
| --- | --- | --- | --- | --- | --- | --- | --- | --- | --- | --- |
| 151 | 1.5 | **Inspiration Gallery Management** |  | 2.38d | 2012-02-22 16:00 | 2012-02-27 10:00 | 2, 68 | 8d | 0d | 23h |
| 152 | 1.5.1 | **Service Endpoints** |  | 0.5d | 2012-02-22 16:00 | 2012-02-23 11:00 | 2, 68 | 9.88d |  | 4h |
| 153 | 1.5.1.1 | Architecture & Design |  | 1h | 2012-02-22 16:00 | 2012-02-22 17:00 |  | 9.88d | 0d | 1h |
| 154 | 1.5.1.2 | Database Implementation | milestone | 0h | 2012-02-22 17:00 | 2012-02-22 17:00 | 153 | 9.88d | 0d |  |
| 155 | 1.5.1.3 | Implementation |  | 2h | 2012-02-23 08:00 | 2012-02-23 10:00 | 154 | 9.88d | 0d | 2h |
| 156 | 1.5.1.4 | Code Review | milestone | 0h | 2012-02-23 10:00 | 2012-02-23 10:00 | 155 | 9.88d | 0d |  |
| 157 | 1.5.1.5 | Unit Testing |  | 1h | 2012-02-23 10:00 | 2012-02-23 11:00 | 156 | 9.88d | 0d | 1h |
| 158 | 1.5.1.6 | Integration Testing | milestone | 0h | 2012-02-23 11:00 | 2012-02-23 11:00 | 157 | 9.88d | 0d |  |
| 159 | 1.5.1.7 | QA / Bug Fixes | milestone | 0h | 2012-02-23 11:00 | 2012-02-23 11:00 | 158 | 9.88d |  |  |
| 160 | 1.5.2 | **Inspiration Gallery** |  | 2.38d | 2012-02-22 16:00 | 2012-02-27 10:00 |  | 8d |  | 19h |
| 161 | 1.5.2.1 | Architecture & Design |  | 2h | 2012-02-22 16:00 | 2012-02-23 09:00 |  | 8d | 0d | 2h |
| 162 | 1.5.2.2 | Database Implementation |  | 2h | 2012-02-23 09:00 | 2012-02-23 11:00 | 161 | 8d | 0d | 2h |
| 163 | 1.5.2.3 | CMS Implementation |  | 4h | 2012-02-23 11:00 | 2012-02-23 16:00 | 162 | 8d | 0d | 4h |
| 164 | 1.5.2.4 | Implementation |  | 8h | 2012-02-23 16:00 | 2012-02-24 16:00 | 163 | 8d | 0d | 8h |
| 165 | 1.5.2.5 | Code Review | milestone | 0h | 2012-02-24 16:00 | 2012-02-24 16:00 | 164 | 8d | 0d |  |
| 166 | 1.5.2.6 | Unit Testing |  | 2h | 2012-02-24 16:00 | 2012-02-27 09:00 | 165 | 8d | 0d | 2h |
| 167 | 1.5.2.7 | Integration Testing |  | 1h | 2012-02-27 09:00 | 2012-02-27 10:00 | 166 | 8d | 0d | 1h |
| 168 | 1.5.2.8 | QA / Bug Fixes | milestone | 0h | 2012-02-27 10:00 | 2012-02-27 10:00 | 167 | 8d |  |  |
| 169 | 1.6 | **Content Management** |  | 21.81d | 2012-02-22 16:00 | 2012-03-23 14:30 | 2, 68, 24 | 0d |  | 241.5h |
| 170 | 1.6.1 | **Core Content Management Infrastructure** |  | 17.81d | 2012-02-22 16:00 | 2012-03-19 14:30 |  | 0d |  | 142.5h |
| 171 | 1.6.1.1 | Architecture & Design |  | 40h | 2012-02-22 16:00 | 2012-02-29 16:00 |  | 0d |  | 40h |
| 172 | 1.6.1.2 | Database Implementation |  | 8h | 2012-02-29 16:00 | 2012-03-01 16:00 | 171 | 0d |  | 8h |
| 173 | 1.6.1.3 | Implementation |  | 80h | 2012-03-01 16:00 | 2012-03-15 16:00 | 172 | 0d |  | 80h |
| 174 | 1.6.1.4 | Code Review |  | 2.5h | 2012-03-15 16:00 | 2012-03-16 09:30 | 173 | 0d |  | 2.5h |
| 175 | 1.6.1.5 | Unit Testing |  | 8h | 2012-03-16 09:30 | 2012-03-19 09:30 | 174 | 0d |  | 8h |
| 176 | 1.6.1.6 | Integration Testing |  | 4h | 2012-03-19 09:30 | 2012-03-19 14:30 | 175 | 0d |  | 4h |
| 177 | 1.6.1.7 | QA / Bug Fixes | milestone | 0h | 2012-03-19 14:30 | 2012-03-19 14:30 | 176 | 0d |  |  |

Notes:
- 152: Required. Serve as the point of interaction to allow the marketing and administrative websites to interact with inspiration gallery functionality.
- 170: This task encompasses the architecture, design, and implementation of necessary infrastructure for using the chosen third-party CMS system as a backbone for the content, taxonomy, processes, and business logic associated with the marketing and administrative websites.
- 174: The architecture and integration design will be reviewed by the [CLIENT] Development team as there is a high possibility of conflicts with the existing [CLIENT] and solution architecture due to the CMS system's constraints.

| ID | WBS | Task | Type | Duration | Start | Finish | Predecessors | Total slack | Free slack | Work |
| --- | --- | --- | --- | --- | --- | --- | --- | --- | --- | --- |
| 178 | 1.6.2 | **Products** |  | 4d | 2012-03-19 14:30 | 2012-03-23 14:30 | 170 | 0d |  | 32h |
| 179 | 1.6.2.1 | Architecture & Design |  | 4h | 2012-03-19 14:30 | 2012-03-20 09:30 |  | 0d |  | 4h |
| 180 | 1.6.2.2 | Database Implementation |  | 2h | 2012-03-20 09:30 | 2012-03-20 11:30 | 179 | 0d |  | 2h |
| 181 | 1.6.2.3 | CMS Implementation |  | 4h | 2012-03-20 11:30 | 2012-03-20 16:30 | 180 | 0d |  | 4h |
| 182 | 1.6.2.4 | Implementation |  | 16h | 2012-03-20 16:30 | 2012-03-22 16:30 | 181 | 0d |  | 16h |
| 183 | 1.6.2.5 | Globalization | milestone | 0h | 2012-03-22 16:30 | 2012-03-22 16:30 | 182 | 0d |  |  |
| 184 | 1.6.2.6 | Code Review | milestone | 0h | 2012-03-22 16:30 | 2012-03-22 16:30 | 183 | 0d |  |  |
| 185 | 1.6.2.7 | Unit Testing |  | 4h | 2012-03-22 16:30 | 2012-03-23 11:30 | 184 | 0d |  | 4h |
| 186 | 1.6.2.8 | Integration Testing |  | 2h | 2012-03-23 11:30 | 2012-03-23 14:30 | 185 | 0d |  | 2h |
| 187 | 1.6.2.9 | QA / Bug Fixes | milestone | 0h | 2012-03-23 14:30 | 2012-03-23 14:30 | 186 | 0d |  |  |
| 188 | 1.6.3 | **Widget Customization Groups** |  | 1d | 2012-03-19 14:30 | 2012-03-20 14:30 | 170 | 3d |  | 8h |
| 189 | 1.6.3.1 | Architecture & Design |  | 2h | 2012-03-19 14:30 | 2012-03-19 16:30 |  | 3d | 0d | 2h |
| 190 | 1.6.3.2 | Database Implementation | milestone | 0h | 2012-03-19 16:30 | 2012-03-19 16:30 | 189 | 3d | 0d |  |
| 191 | 1.6.3.3 | CMS Implementation |  | 3h | 2012-03-19 16:30 | 2012-03-20 10:30 | 190 | 3d | 0d | 3h |
| 192 | 1.6.3.4 | Implementation |  | 2h | 2012-03-20 10:30 | 2012-03-20 13:30 | 191 | 3d | 0d | 2h |
| 193 | 1.6.3.5 | Globalization | milestone | 0h | 2012-03-20 13:30 | 2012-03-20 13:30 | 192 | 3d | 0d |  |
| 194 | 1.6.3.6 | Code Review | milestone | 0h | 2012-03-20 13:30 | 2012-03-20 13:30 | 193 | 3d | 0d |  |
| 195 | 1.6.3.7 | Unit Testing |  | 1h | 2012-03-20 13:30 | 2012-03-20 14:30 | 194 | 3d | 0d | 1h |
| 196 | 1.6.3.8 | Integration Testing | milestone | 0h | 2012-03-20 14:30 | 2012-03-20 14:30 | 195 | 3d | 0d |  |
| 197 | 1.6.3.9 | QA / Bug Fixes | milestone | 0h | 2012-03-20 14:30 | 2012-03-20 14:30 | 196 | 3d |  |  |
| 198 | 1.6.4 | **Technical Specification Notes** |  | 1d | 2012-03-19 14:30 | 2012-03-20 14:30 | 170 | 3d |  | 8h |
| 199 | 1.6.4.1 | Architecture & Design |  | 2h | 2012-03-19 14:30 | 2012-03-19 16:30 |  | 3d | 0d | 2h |
| 200 | 1.6.4.2 | Database Implementation | milestone | 0h | 2012-03-19 16:30 | 2012-03-19 16:30 | 199 | 3d | 0d |  |
| 201 | 1.6.4.3 | CMS Implementation |  | 3h | 2012-03-19 16:30 | 2012-03-20 10:30 | 200 | 3d | 0d | 3h |
| 202 | 1.6.4.4 | Implementation |  | 2h | 2012-03-20 10:30 | 2012-03-20 13:30 | 201 | 3d | 0d | 2h |
| 203 | 1.6.4.5 | Globalization | milestone | 0h | 2012-03-20 13:30 | 2012-03-20 13:30 | 202 | 3d | 0d |  |
| 204 | 1.6.4.6 | Code Review | milestone | 0h | 2012-03-20 13:30 | 2012-03-20 13:30 | 203 | 3d | 0d |  |
| 205 | 1.6.4.7 | Unit Testing |  | 1h | 2012-03-20 13:30 | 2012-03-20 14:30 | 204 | 3d | 0d | 1h |
| 206 | 1.6.4.8 | Integration Testing | milestone | 0h | 2012-03-20 14:30 | 2012-03-20 14:30 | 205 | 3d | 0d |  |
| 207 | 1.6.4.9 | QA / Bug Fixes | milestone | 0h | 2012-03-20 14:30 | 2012-03-20 14:30 | 206 | 3d |  |  |

Notes:
- 178: CMS customization and integration with product data and the browse-and-search engine. This task also includes customization of names with marketing-specific text for display on the public website.
- 188: CMS customization for support of marketing-specific groupings for widget customizations will need to be created, as the core product data is not aligned with marketing needs.
- 198: CMS customization for support of marketing-specific notes to augment the core data provided for technical specification notes.

| ID | WBS | Task | Type | Duration | Start | Finish | Predecessors | Total slack | Free slack | Work |
| --- | --- | --- | --- | --- | --- | --- | --- | --- | --- | --- |
| 208 | 1.6.5 | **Obscured Pricing** |  | 1d | 2012-03-19 14:30 | 2012-03-20 14:30 | 170 | 3d |  | 8h |
| 209 | 1.6.5.1 | Architecture & Design |  | 2h | 2012-03-19 14:30 | 2012-03-19 16:30 |  | 3d | 0d | 2h |
| 210 | 1.6.5.2 | Database Implementation | milestone | 0h | 2012-03-19 16:30 | 2012-03-19 16:30 | 209 | 3d | 0d |  |
| 211 | 1.6.5.3 | CMS Implementation |  | 3h | 2012-03-19 16:30 | 2012-03-20 10:30 | 210 | 3d | 0d | 3h |
| 212 | 1.6.5.4 | Implementation |  | 2h | 2012-03-20 10:30 | 2012-03-20 13:30 | 211 | 3d | 0d | 2h |
| 213 | 1.6.5.5 | Globalization | milestone | 0h | 2012-03-20 13:30 | 2012-03-20 13:30 | 212 | 3d | 0d |  |
| 214 | 1.6.5.6 | Code Review | milestone | 0h | 2012-03-20 13:30 | 2012-03-20 13:30 | 213 | 3d | 0d |  |
| 215 | 1.6.5.7 | Unit Testing |  | 1h | 2012-03-20 13:30 | 2012-03-20 14:30 | 214 | 3d | 0d | 1h |
| 216 | 1.6.5.8 | Integration Testing | milestone | 0h | 2012-03-20 14:30 | 2012-03-20 14:30 | 215 | 3d | 0d |  |
| 217 | 1.6.5.9 | QA / Bug Fixes | milestone | 0h | 2012-03-20 14:30 | 2012-03-20 14:30 | 216 | 3d |  |  |
| 218 | 1.6.6 | **Careers** |  | 2.38d | 2012-03-19 14:30 | 2012-03-22 08:30 | 170 | 1.62d |  | 19h |
| 219 | 1.6.6.1 | Architecture & Design |  | 4h | 2012-03-19 14:30 | 2012-03-20 09:30 |  | 1.62d | 0d | 4h |
| 220 | 1.6.6.2 | Database Implementation | milestone | 0h | 2012-03-20 09:30 | 2012-03-20 09:30 | 219 | 1.62d | 0d |  |
| 221 | 1.6.6.3 | CMS Implementation |  | 4h | 2012-03-20 09:30 | 2012-03-20 14:30 | 220 | 1.62d | 0d | 4h |
| 222 | 1.6.6.4 | Implementation |  | 8h | 2012-03-20 14:30 | 2012-03-21 14:30 | 221 | 1.62d | 0d | 8h |
| 223 | 1.6.6.5 | Globalization | milestone | 0h | 2012-03-21 14:30 | 2012-03-21 14:30 | 222 | 1.62d | 0d |  |
| 224 | 1.6.6.6 | Code Review | milestone | 0h | 2012-03-21 14:30 | 2012-03-21 14:30 | 223 | 1.62d | 0d |  |
| 225 | 1.6.6.7 | Unit Testing |  | 2h | 2012-03-21 14:30 | 2012-03-21 16:30 | 224 | 1.62d | 0d | 2h |
| 226 | 1.6.6.8 | Integration Testing |  | 1h | 2012-03-21 16:30 | 2012-03-22 08:30 | 225 | 1.62d | 0d | 1h |
| 227 | 1.6.6.9 | QA / Bug Fixes | milestone | 0h | 2012-03-22 08:30 | 2012-03-22 08:30 | 226 | 1.62d |  |  |
| 228 | 1.6.7 | **Inspiration Gallery Design Styles** |  | 1d | 2012-02-22 16:00 | 2012-02-23 16:00 |  | 20.81d |  | 8h |
| 229 | 1.6.7.1 | Architecture & Design |  | 2h | 2012-02-22 16:00 | 2012-02-23 09:00 |  | 20.81d | 0d | 2h |
| 230 | 1.6.7.2 | Database Implementation | milestone | 0h | 2012-02-23 09:00 | 2012-02-23 09:00 | 229 | 20.81d | 0d |  |
| 231 | 1.6.7.3 | CMS Implementation |  | 3h | 2012-02-23 09:00 | 2012-02-23 12:00 | 230 | 20.81d | 0d | 3h |
| 232 | 1.6.7.4 | Implementation |  | 2h | 2012-02-23 13:00 | 2012-02-23 15:00 | 231 | 20.81d | 0d | 2h |
| 233 | 1.6.7.5 | Globalization | milestone | 0h | 2012-02-23 15:00 | 2012-02-23 15:00 | 232 | 20.81d | 0d |  |
| 234 | 1.6.7.6 | Code Review | milestone | 0h | 2012-02-23 15:00 | 2012-02-23 15:00 | 233 | 20.81d | 0d |  |
| 235 | 1.6.7.7 | Unit Testing |  | 1h | 2012-02-23 15:00 | 2012-02-23 16:00 | 234 | 20.81d | 0d | 1h |
| 236 | 1.6.7.8 | Integration Testing | milestone | 0h | 2012-02-23 16:00 | 2012-02-23 16:00 | 235 | 20.81d | 0d |  |
| 237 | 1.6.7.9 | QA / Bug Fixes | milestone | 0h | 2012-02-23 16:00 | 2012-02-23 16:00 | 236 | 20.81d |  |  |

Notes:
- 208: CMS customization for support of obscured pricing to be specified for given pricing ranges.
- 218: CMS customization for support of career items, which will have the following properties: / ·Career data consists only of job postings. / ·Job postings are comprised of data supported by the CMS engine itself; no integration with a database is needed. / ·Job postings have workflow requirements which are supported by the CMS engine itself, no implementation of custom workflow is needed. / ·No integration with external career data or employment-related systems is required.
- 228: CMS customization for support of gallery styles which are valid for association with inspiration galleries.

| ID | WBS | Task | Type | Duration | Start | Finish | Predecessors | Total slack | Free slack | Work |
| --- | --- | --- | --- | --- | --- | --- | --- | --- | --- | --- |
| 238 | 1.6.8 | **Inspiration Gallery Widgets** |  | 1d | 2012-02-22 16:00 | 2012-02-23 16:00 |  | 20.81d |  | 8h |
| 239 | 1.6.8.1 | Architecture & Design |  | 2h | 2012-02-22 16:00 | 2012-02-23 09:00 |  | 20.81d | 0d | 2h |
| 240 | 1.6.8.2 | Database Implementation | milestone | 0h | 2012-02-23 09:00 | 2012-02-23 09:00 | 239 | 20.81d | 0d |  |
| 241 | 1.6.8.3 | CMS Implementation |  | 3h | 2012-02-23 09:00 | 2012-02-23 12:00 | 240 | 20.81d | 0d | 3h |
| 242 | 1.6.8.4 | Implementation |  | 2h | 2012-02-23 13:00 | 2012-02-23 15:00 | 241 | 20.81d | 0d | 2h |
| 243 | 1.6.8.5 | Globalization | milestone | 0h | 2012-02-23 15:00 | 2012-02-23 15:00 | 242 | 20.81d | 0d |  |
| 244 | 1.6.8.6 | Code Review | milestone | 0h | 2012-02-23 15:00 | 2012-02-23 15:00 | 243 | 20.81d | 0d |  |
| 245 | 1.6.8.7 | Unit Testing |  | 1h | 2012-02-23 15:00 | 2012-02-23 16:00 | 244 | 20.81d | 0d | 1h |
| 246 | 1.6.8.8 | Integration Testing | milestone | 0h | 2012-02-23 16:00 | 2012-02-23 16:00 | 245 | 20.81d | 0d |  |
| 247 | 1.6.8.9 | QA / Bug Fixes | milestone | 0h | 2012-02-23 16:00 | 2012-02-23 16:00 | 246 | 20.81d |  |  |
| 248 | 1.6.9 | **[CLIENT] For Audiences** |  | 1d | 2012-03-19 14:30 | 2012-03-20 14:30 | 170 | 3d |  | 8h |
| 249 | 1.6.9.1 | Architecture & Design |  | 2h | 2012-03-19 14:30 | 2012-03-19 16:30 |  | 3d | 0d | 2h |
| 250 | 1.6.9.2 | Database Implementation | milestone | 0h | 2012-03-19 16:30 | 2012-03-19 16:30 | 249 | 3d | 0d |  |
| 251 | 1.6.9.3 | CMS Implementation |  | 3h | 2012-03-19 16:30 | 2012-03-20 10:30 | 250 | 3d | 0d | 3h |
| 252 | 1.6.9.4 | Implementation |  | 2h | 2012-03-20 10:30 | 2012-03-20 13:30 | 251 | 3d | 0d | 2h |
| 253 | 1.6.9.5 | Globalization | milestone | 0h | 2012-03-20 13:30 | 2012-03-20 13:30 | 252 | 3d | 0d |  |
| 254 | 1.6.9.6 | Code Review | milestone | 0h | 2012-03-20 13:30 | 2012-03-20 13:30 | 253 | 3d | 0d |  |
| 255 | 1.6.9.7 | Unit Testing |  | 1h | 2012-03-20 13:30 | 2012-03-20 14:30 | 254 | 3d | 0d | 1h |
| 256 | 1.6.9.8 | Integration Testing | milestone | 0h | 2012-03-20 14:30 | 2012-03-20 14:30 | 255 | 3d | 0d |  |
| 257 | 1.6.9.9 | QA / Bug Fixes | milestone | 0h | 2012-03-20 14:30 | 2012-03-20 14:30 | 256 | 3d |  |  |
| 258 | 1.7 | **Administrative Task Support** |  | 3d | 2012-03-23 14:30 | 2012-03-28 14:30 | 169, 2 | 20.12d |  | 24h |
| 259 | 1.7.1 | **Action Items** |  | 3d | 2012-03-23 14:30 | 2012-03-28 14:30 |  | 20.12d |  | 24h |
| 260 | 1.7.1.1 | Architecture & Design |  | 4h | 2012-03-23 14:30 | 2012-03-26 09:30 |  | 20.12d | 0d | 4h |
| 261 | 1.7.1.2 | Database Implementation |  | 2h | 2012-03-26 09:30 | 2012-03-26 11:30 | 260 | 20.12d | 0d | 2h |
| 262 | 1.7.1.3 | CMS Implementation |  | 4h | 2012-03-26 11:30 | 2012-03-26 16:30 | 261 | 20.12d | 0d | 4h |
| 263 | 1.7.1.4 | Implementation |  | 8h | 2012-03-26 16:30 | 2012-03-27 16:30 | 262 | 20.12d | 0d | 8h |
| 264 | 1.7.1.5 | Code Review | milestone | 0h | 2012-03-27 16:30 | 2012-03-27 16:30 | 263 | 20.12d | 0d |  |
| 265 | 1.7.1.6 | Unit Testing |  | 4h | 2012-03-27 16:30 | 2012-03-28 11:30 | 264 | 20.12d | 0d | 4h |
| 266 | 1.7.1.7 | Integration Testing |  | 2h | 2012-03-28 11:30 | 2012-03-28 14:30 | 265 | 20.12d | 0d | 2h |
| 267 | 1.7.1.8 | QA / Bug Fixes | milestone | 0h | 2012-03-28 14:30 | 2012-03-28 14:30 | 266 | 20.12d |  |  |

Notes:
- 238: CMS customization for support of the set of widgets which are valid for association with inspiration galleries.
- 248: CMS customization for support of target audiences for use in the "[CLIENT] For" section of the website.
- 258: This item include support for having various data items brought to the attention of administrators in an in-box like manner. These items may have context sensitive light workflow operations performed against them to signal the current state of the associated task.
- 259: This task covers the creation of an action item in-box area and the associated light workflow needs. It is assumed that the workflow mechanism itself is powered by the CMS system and integrated therein.

| ID | WBS | Task | Type | Duration | Start | Finish | Predecessors | Total slack | Free slack | Work |
| --- | --- | --- | --- | --- | --- | --- | --- | --- | --- | --- |
| 268 | 1.8 | **Marketing Website** |  | 32.56d | 2012-02-27 10:00 | 2012-04-11 15:30 | 2, 35, 68, 110, 151 | 8d |  | 549h |
| 269 | 1.8.1 | Familiarization with Final Wireframes |  | 2h | 2012-02-27 10:00 | 2012-02-27 12:00 |  | 8d | 0d | 8h |
| 270 | 1.8.2 | Familiarization with Final Creative Assets |  | 1h | 2012-02-27 13:00 | 2012-02-27 14:00 | 269 | 8d | 0d | 4h |
| 271 | 1.8.3 | **Shared Templates and Assets** |  | 11.88d | 2012-02-27 14:00 | 2012-03-14 12:00 | 270, 269 | 8d | 0d | 95h |
| 272 | 1.8.3.1 | Translate Creative Assets |  | 8h | 2012-02-27 14:00 | 2012-02-28 14:00 |  | 8d | 0d | 8h |
| 273 | 1.8.3.2 | Architecture & Design |  | 8h | 2012-02-28 14:00 | 2012-02-29 14:00 | 272 | 8d | 0d | 8h |
| 274 | 1.8.3.3 | CMS Content Structure Integration |  | 32h | 2012-02-29 14:00 | 2012-03-06 14:00 | 273 | 8d | 0d | 32h |
| 275 | 1.8.3.4 | User Interface Implementation |  | 4h | 2012-03-06 14:00 | 2012-03-07 09:00 | 274 | 8d | 0d | 4h |
| 276 | 1.8.3.5 | User Experience Implementation |  | 2h | 2012-03-07 09:00 | 2012-03-07 11:00 | 275 | 8d | 0d | 2h |
| 277 | 1.8.3.6 | News Feed Integration |  | 2h | 2012-03-07 11:00 | 2012-03-07 14:00 | 276 | 8d | 0d | 2h |
| 278 | 1.8.3.7 | Technical Question Integration |  | 2h | 2012-03-07 14:00 | 2012-03-07 16:00 | 277 | 8d | 0d | 2h |
| 279 | 1.8.3.8 | Share This Page Implementation |  | 8h | 2012-03-07 16:00 | 2012-03-08 16:00 | 278 | 8d | 0d | 8h |
| 280 | 1.8.3.9 | Baseline Server-Side Architecture Implementation |  | 12h | 2012-03-08 16:00 | 2012-03-12 11:00 | 279 | 8d | 0d | 12h |
| 281 | 1.8.3.10 | Globalization |  | 8h | 2012-03-12 11:00 | 2012-03-13 11:00 | 280 | 8d | 0d | 8h |
| 282 | 1.8.3.11 | Code Review | milestone | 0h | 2012-03-13 11:00 | 2012-03-13 11:00 | 281 | 8d | 0d |  |
| 283 | 1.8.3.12 | Unit Testing |  | 6h | 2012-03-13 11:00 | 2012-03-14 09:00 | 282 | 8d | 0d | 6h |
| 284 | 1.8.3.13 | Integration Testing |  | 3h | 2012-03-14 09:00 | 2012-03-14 12:00 | 283 | 8d | 0d | 3h |
| 285 | 1.8.3.14 | QA / Bug Fixes | milestone | 0h | 2012-03-14 12:00 | 2012-03-14 12:00 | 284 | 8d |  |  |
| 286 | 1.8.4 | **Persistent Header** |  | 1d | 2012-03-14 13:00 | 2012-03-15 12:00 | 269, 270, 271 | 8d | 0d | 8h |
| 287 | 1.8.4.1 | Translate Creative Assets |  | 1h | 2012-03-14 13:00 | 2012-03-14 14:00 |  | 8d | 0d | 1h |
| 288 | 1.8.4.2 | Architecture & Design |  | 1h | 2012-03-14 14:00 | 2012-03-14 15:00 | 287 | 8d | 0d | 1h |
| 289 | 1.8.4.3 | User Interface Implementation |  | 1h | 2012-03-14 15:00 | 2012-03-14 16:00 | 288 | 8d | 0d | 1h |
| 290 | 1.8.4.4 | User Experience Implementation |  | 2h | 2012-03-14 16:00 | 2012-03-15 09:00 | 289 | 8d | 0d | 2h |
| 291 | 1.8.4.5 | CMS Implementation |  | 1h | 2012-03-15 09:00 | 2012-03-15 10:00 | 290 | 8d | 0d | 1h |
| 292 | 1.8.4.6 | Analytics Implementation | milestone | 0h | 2012-03-15 10:00 | 2012-03-15 10:00 | 291 | 8d | 0d |  |
| 293 | 1.8.4.7 | Globalization |  | 1h | 2012-03-15 10:00 | 2012-03-15 11:00 | 292 | 8d | 0d | 1h |
| 294 | 1.8.4.8 | Code Review | milestone | 0h | 2012-03-15 11:00 | 2012-03-15 11:00 | 293 | 8d | 0d |  |
| 295 | 1.8.4.9 | Unit Testing | milestone | 0h | 2012-03-15 11:00 | 2012-03-15 11:00 | 294 | 8d | 0d |  |
| 296 | 1.8.4.10 | Integration Testing |  | 1h | 2012-03-15 11:00 | 2012-03-15 12:00 | 295 | 8d | 0d | 1h |
| 297 | 1.8.4.11 | QA / Bug Fixes | milestone | 0h | 2012-03-15 12:00 | 2012-03-15 12:00 | 296 | 8d |  |  |

Notes:
- 268: ·SEO metadata for a page will be coded with the page and is not user editable. / ·SEO metadata for data-driven template pages such as the category, facet, and product pages will be extracted from the data that drives that page. / ·The website content must support internationalization. / ·The architecture and implementation for internationalization is being developed by the Decor IT team. / ·The internationalization services are complete and ready for use. / ·All product data visible to the website will exist in the search engine. / ·All ordering-related functionality will be developed by the [CLIENT] IT team. / ·All analytics needs have been finalized and the details have been handed-off.
- 269: The wireframes are in a final state. Any changes to the wireframes at this point will incur rework and invalidate estimates.
- 270: The creative assets are complete, have been handed-off and are in a final state. Any changes to the assets at this point will incur rework and invalidate estimates.
- 271: This item includes - / ·Shared page templates / ·Shared style sheets / ·Shared scripts / ·Base analytics implementation / ·Share This Page operation
- 274: This item accounts for the required structure in order for page templates to serve as extensions of CMS-supplied content.
- 279: ·Share This Page functionality is to be provided by a third party client-side library. / ·Share This Page functionality will exist in the shared layout and be available on the majority of pages.
- 286: Includes functionality for - / ·Free Text Search / ·Account Login

| ID | WBS | Task | Type | Duration | Start | Finish | Predecessors | Total slack | Free slack | Work |
| --- | --- | --- | --- | --- | --- | --- | --- | --- | --- | --- |
| 298 | 1.8.5 | **Persistent Footer** |  | 1d | 2012-03-14 13:00 | 2012-03-15 12:00 | 269, 270, 271 | 8d | 0d | 8h |
| 299 | 1.8.5.1 | Translate Creative Assets |  | 1h | 2012-03-14 13:00 | 2012-03-14 14:00 |  | 8d | 0d | 1h |
| 300 | 1.8.5.2 | Architecture & Design |  | 1h | 2012-03-14 14:00 | 2012-03-14 15:00 | 299 | 8d | 0d | 1h |
| 301 | 1.8.5.3 | User Interface Implementation |  | 1h | 2012-03-14 15:00 | 2012-03-14 16:00 | 300 | 8d | 0d | 1h |
| 302 | 1.8.5.4 | User Experience Implementation |  | 2h | 2012-03-14 16:00 | 2012-03-15 09:00 | 301 | 8d | 0d | 2h |
| 303 | 1.8.5.5 | CMS Implementation |  | 1h | 2012-03-15 09:00 | 2012-03-15 10:00 | 302 | 8d | 0d | 1h |
| 304 | 1.8.5.6 | Analytics Implementation | milestone | 0h | 2012-03-15 10:00 | 2012-03-15 10:00 | 303 | 8d | 0d |  |
| 305 | 1.8.5.7 | Globalization |  | 1h | 2012-03-15 10:00 | 2012-03-15 11:00 | 304 | 8d | 0d | 1h |
| 306 | 1.8.5.8 | Code Review | milestone | 0h | 2012-03-15 11:00 | 2012-03-15 11:00 | 305 | 8d | 0d |  |
| 307 | 1.8.5.9 | Unit Testing | milestone | 0h | 2012-03-15 11:00 | 2012-03-15 11:00 | 306 | 8d | 0d |  |
| 308 | 1.8.5.10 | Integration Testing |  | 1h | 2012-03-15 11:00 | 2012-03-15 12:00 | 307 | 8d | 0d | 1h |
| 309 | 1.8.5.11 | QA / Bug Fixes | milestone | 0h | 2012-03-15 12:00 | 2012-03-15 12:00 | 308 | 8d |  |  |
| 310 | 1.8.6 | **CMS Content-Only Pages** |  | 0.94d | 2012-03-15 13:00 | 2012-03-16 11:30 | 298, 269, 270, 271, 286 | 11.38d | 3.38d | 122.5h |
| 311 | 1.8.6.1 | **Home** |  | 0.69d | 2012-03-15 13:00 | 2012-03-16 09:30 |  | 11.62d |  | 5.5h |
| 312 | 1.8.6.1.1 | Translate Creative Assets |  | 1h | 2012-03-15 13:00 | 2012-03-15 14:00 |  | 11.62d | 0d | 1h |
| 313 | 1.8.6.1.2 | Architecture & Design | milestone | 0h | 2012-03-15 14:00 | 2012-03-15 14:00 | 312 | 11.62d | 0d |  |
| 314 | 1.8.6.1.3 | User Interface Implementation |  | 1h | 2012-03-15 14:00 | 2012-03-15 15:00 | 313 | 11.62d | 0d | 1h |
| 315 | 1.8.6.1.4 | User Experience Implementation |  | 0.5h | 2012-03-15 15:00 | 2012-03-15 15:30 | 314 | 11.62d | 0d | 0.5h |
| 316 | 1.8.6.1.5 | CMS Implementation |  | 1h | 2012-03-15 15:30 | 2012-03-15 16:30 | 315 | 11.62d | 0d | 1h |
| 317 | 1.8.6.1.6 | Analytics Implementation |  | 0.5h | 2012-03-15 16:30 | 2012-03-15 17:00 | 316 | 11.62d | 0d | 0.5h |
| 318 | 1.8.6.1.7 | Globalization |  | 1h | 2012-03-16 08:00 | 2012-03-16 09:00 | 317 | 11.62d | 0d | 1h |
| 319 | 1.8.6.1.8 | Code Review | milestone | 0h | 2012-03-16 09:00 | 2012-03-16 09:00 | 318 | 11.62d | 0d |  |
| 320 | 1.8.6.1.9 | Unit Testing |  | 0.5h | 2012-03-16 09:00 | 2012-03-16 09:30 | 319 | 11.62d | 0d | 0.5h |
| 321 | 1.8.6.1.10 | Integration Testing | milestone | 0h | 2012-03-16 09:30 | 2012-03-16 09:30 | 320 | 11.62d | 0d |  |
| 322 | 1.8.6.1.11 | QA / Bug Fixes | milestone | 0h | 2012-03-16 09:30 | 2012-03-16 09:30 | 321 | 11.62d |  |  |

Notes:
- 298: Includes functionality for - / ·Request Referral / ·Pricing Guide Request
- 310: ·Most of these pages have not appeared in the wireframes, and therefore their contents are unknown. A high degree of inaccuracy should be expected for these items. / ·These pages contain no CMS or data-driven content.

| ID | WBS | Task | Type | Duration | Start | Finish | Predecessors | Total slack | Free slack | Work |
| --- | --- | --- | --- | --- | --- | --- | --- | --- | --- | --- |
| 323 | 1.8.6.2 | **Why Choose [CLIENT]** |  | 0.69d | 2012-03-15 13:00 | 2012-03-16 09:30 |  | 11.62d |  | 5.5h |
| 324 | 1.8.6.2.1 | Translate Creative Assets |  | 1h | 2012-03-15 13:00 | 2012-03-15 14:00 |  | 11.62d | 0d | 1h |
| 325 | 1.8.6.2.2 | Architecture & Design | milestone | 0h | 2012-03-15 14:00 | 2012-03-15 14:00 | 324 | 11.62d | 0d |  |
| 326 | 1.8.6.2.3 | User Interface Implementation |  | 1h | 2012-03-15 14:00 | 2012-03-15 15:00 | 325 | 11.62d | 0d | 1h |
| 327 | 1.8.6.2.4 | User Experience Implementation |  | 0.5h | 2012-03-15 15:00 | 2012-03-15 15:30 | 326 | 11.62d | 0d | 0.5h |
| 328 | 1.8.6.2.5 | CMS Implementation |  | 1h | 2012-03-15 15:30 | 2012-03-15 16:30 | 327 | 11.62d | 0d | 1h |
| 329 | 1.8.6.2.6 | Analytics Implementation |  | 0.5h | 2012-03-15 16:30 | 2012-03-15 17:00 | 328 | 11.62d | 0d | 0.5h |
| 330 | 1.8.6.2.7 | Globalization |  | 1h | 2012-03-16 08:00 | 2012-03-16 09:00 | 329 | 11.62d | 0d | 1h |
| 331 | 1.8.6.2.8 | Code Review | milestone | 0h | 2012-03-16 09:00 | 2012-03-16 09:00 | 330 | 11.62d | 0d |  |
| 332 | 1.8.6.2.9 | Unit Testing |  | 0.5h | 2012-03-16 09:00 | 2012-03-16 09:30 | 331 | 11.62d | 0d | 0.5h |
| 333 | 1.8.6.2.10 | Integration Testing | milestone | 0h | 2012-03-16 09:30 | 2012-03-16 09:30 | 332 | 11.62d | 0d |  |
| 334 | 1.8.6.2.11 | QA / Bug Fixes | milestone | 0h | 2012-03-16 09:30 | 2012-03-16 09:30 | 333 | 11.62d |  |  |
| 335 | 1.8.6.3 | **About Us** |  | 0.69d | 2012-03-15 13:00 | 2012-03-16 09:30 |  | 11.62d |  | 5.5h |
| 336 | 1.8.6.3.1 | Translate Creative Assets |  | 1h | 2012-03-15 13:00 | 2012-03-15 14:00 |  | 11.62d | 0d | 1h |
| 337 | 1.8.6.3.2 | Architecture & Design | milestone | 0h | 2012-03-15 14:00 | 2012-03-15 14:00 | 336 | 11.62d | 0d |  |
| 338 | 1.8.6.3.3 | User Interface Implementation |  | 1h | 2012-03-15 14:00 | 2012-03-15 15:00 | 337 | 11.62d | 0d | 1h |
| 339 | 1.8.6.3.4 | User Experience Implementation |  | 0.5h | 2012-03-15 15:00 | 2012-03-15 15:30 | 338 | 11.62d | 0d | 0.5h |
| 340 | 1.8.6.3.5 | CMS Implementation |  | 1h | 2012-03-15 15:30 | 2012-03-15 16:30 | 339 | 11.62d | 0d | 1h |
| 341 | 1.8.6.3.6 | Analytics Implementation |  | 0.5h | 2012-03-15 16:30 | 2012-03-15 17:00 | 340 | 11.62d | 0d | 0.5h |
| 342 | 1.8.6.3.7 | Globalization |  | 1h | 2012-03-16 08:00 | 2012-03-16 09:00 | 341 | 11.62d | 0d | 1h |
| 343 | 1.8.6.3.8 | Code Review | milestone | 0h | 2012-03-16 09:00 | 2012-03-16 09:00 | 342 | 11.62d | 0d |  |
| 344 | 1.8.6.3.9 | Unit Testing |  | 0.5h | 2012-03-16 09:00 | 2012-03-16 09:30 | 343 | 11.62d | 0d | 0.5h |
| 345 | 1.8.6.3.10 | Integration Testing | milestone | 0h | 2012-03-16 09:30 | 2012-03-16 09:30 | 344 | 11.62d | 0d |  |
| 346 | 1.8.6.3.11 | QA / Bug Fixes | milestone | 0h | 2012-03-16 09:30 | 2012-03-16 09:30 | 345 | 11.62d |  |  |

| ID | WBS | Task | Type | Duration | Start | Finish | Predecessors | Total slack | Free slack | Work |
| --- | --- | --- | --- | --- | --- | --- | --- | --- | --- | --- |
| 347 | 1.8.6.4 | **Legal** |  | 0.69d | 2012-03-15 13:00 | 2012-03-16 09:30 |  | 11.62d |  | 5.5h |
| 348 | 1.8.6.4.1 | Translate Creative Assets |  | 1h | 2012-03-15 13:00 | 2012-03-15 14:00 |  | 11.62d | 0d | 1h |
| 349 | 1.8.6.4.2 | Architecture & Design | milestone | 0h | 2012-03-15 14:00 | 2012-03-15 14:00 | 348 | 11.62d | 0d |  |
| 350 | 1.8.6.4.3 | User Interface Implementation |  | 1h | 2012-03-15 14:00 | 2012-03-15 15:00 | 349 | 11.62d | 0d | 1h |
| 351 | 1.8.6.4.4 | User Experience Implementation |  | 0.5h | 2012-03-15 15:00 | 2012-03-15 15:30 | 350 | 11.62d | 0d | 0.5h |
| 352 | 1.8.6.4.5 | CMS Implementation |  | 1h | 2012-03-15 15:30 | 2012-03-15 16:30 | 351 | 11.62d | 0d | 1h |
| 353 | 1.8.6.4.6 | Analytics Implementation |  | 0.5h | 2012-03-15 16:30 | 2012-03-15 17:00 | 352 | 11.62d | 0d | 0.5h |
| 354 | 1.8.6.4.7 | Globalization |  | 1h | 2012-03-16 08:00 | 2012-03-16 09:00 | 353 | 11.62d | 0d | 1h |
| 355 | 1.8.6.4.8 | Code Review | milestone | 0h | 2012-03-16 09:00 | 2012-03-16 09:00 | 354 | 11.62d | 0d |  |
| 356 | 1.8.6.4.9 | Unit Testing |  | 0.5h | 2012-03-16 09:00 | 2012-03-16 09:30 | 355 | 11.62d | 0d | 0.5h |
| 357 | 1.8.6.4.10 | Integration Testing | milestone | 0h | 2012-03-16 09:30 | 2012-03-16 09:30 | 356 | 11.62d | 0d |  |
| 358 | 1.8.6.4.11 | QA / Bug Fixes | milestone | 0h | 2012-03-16 09:30 | 2012-03-16 09:30 | 357 | 11.62d |  |  |
| 359 | 1.8.6.5 | **Product Design Overview** |  | 0.69d | 2012-03-15 13:00 | 2012-03-16 09:30 |  | 11.62d |  | 5.5h |
| 360 | 1.8.6.5.1 | Translate Creative Assets |  | 1h | 2012-03-15 13:00 | 2012-03-15 14:00 |  | 11.62d | 0d | 1h |
| 361 | 1.8.6.5.2 | Architecture & Design | milestone | 0h | 2012-03-15 14:00 | 2012-03-15 14:00 | 360 | 11.62d | 0d |  |
| 362 | 1.8.6.5.3 | User Interface Implementation |  | 1h | 2012-03-15 14:00 | 2012-03-15 15:00 | 361 | 11.62d | 0d | 1h |
| 363 | 1.8.6.5.4 | User Experience Implementation |  | 0.5h | 2012-03-15 15:00 | 2012-03-15 15:30 | 362 | 11.62d | 0d | 0.5h |
| 364 | 1.8.6.5.5 | CMS Implementation |  | 1h | 2012-03-15 15:30 | 2012-03-15 16:30 | 363 | 11.62d | 0d | 1h |
| 365 | 1.8.6.5.6 | Analytics Implementation |  | 0.5h | 2012-03-15 16:30 | 2012-03-15 17:00 | 364 | 11.62d | 0d | 0.5h |
| 366 | 1.8.6.5.7 | Globalization |  | 1h | 2012-03-16 08:00 | 2012-03-16 09:00 | 365 | 11.62d | 0d | 1h |
| 367 | 1.8.6.5.8 | Code Review | milestone | 0h | 2012-03-16 09:00 | 2012-03-16 09:00 | 366 | 11.62d | 0d |  |
| 368 | 1.8.6.5.9 | Unit Testing |  | 0.5h | 2012-03-16 09:00 | 2012-03-16 09:30 | 367 | 11.62d | 0d | 0.5h |
| 369 | 1.8.6.5.10 | Integration Testing | milestone | 0h | 2012-03-16 09:30 | 2012-03-16 09:30 | 368 | 11.62d | 0d |  |
| 370 | 1.8.6.5.11 | QA / Bug Fixes | milestone | 0h | 2012-03-16 09:30 | 2012-03-16 09:30 | 369 | 11.62d |  |  |

| ID | WBS | Task | Type | Duration | Start | Finish | Predecessors | Total slack | Free slack | Work |
| --- | --- | --- | --- | --- | --- | --- | --- | --- | --- | --- |
| 371 | 1.8.6.6 | **Learn About Our Products Landing** |  | 0.69d | 2012-03-15 13:00 | 2012-03-16 09:30 |  | 11.62d |  | 5.5h |
| 372 | 1.8.6.6.1 | Translate Creative Assets |  | 1h | 2012-03-15 13:00 | 2012-03-15 14:00 |  | 11.62d | 0d | 1h |
| 373 | 1.8.6.6.2 | Architecture & Design | milestone | 0h | 2012-03-15 14:00 | 2012-03-15 14:00 | 372 | 11.62d | 0d |  |
| 374 | 1.8.6.6.3 | User Interface Implementation |  | 1h | 2012-03-15 14:00 | 2012-03-15 15:00 | 373 | 11.62d | 0d | 1h |
| 375 | 1.8.6.6.4 | User Experience Implementation |  | 0.5h | 2012-03-15 15:00 | 2012-03-15 15:30 | 374 | 11.62d | 0d | 0.5h |
| 376 | 1.8.6.6.5 | CMS Implementation |  | 1h | 2012-03-15 15:30 | 2012-03-15 16:30 | 375 | 11.62d | 0d | 1h |
| 377 | 1.8.6.6.6 | Analytics Implementation |  | 0.5h | 2012-03-15 16:30 | 2012-03-15 17:00 | 376 | 11.62d | 0d | 0.5h |
| 378 | 1.8.6.6.7 | Globalization |  | 1h | 2012-03-16 08:00 | 2012-03-16 09:00 | 377 | 11.62d | 0d | 1h |
| 379 | 1.8.6.6.8 | Code Review | milestone | 0h | 2012-03-16 09:00 | 2012-03-16 09:00 | 378 | 11.62d | 0d |  |
| 380 | 1.8.6.6.9 | Unit Testing |  | 0.5h | 2012-03-16 09:00 | 2012-03-16 09:30 | 379 | 11.62d | 0d | 0.5h |
| 381 | 1.8.6.6.10 | Integration Testing | milestone | 0h | 2012-03-16 09:30 | 2012-03-16 09:30 | 380 | 11.62d | 0d |  |
| 382 | 1.8.6.6.11 | QA / Bug Fixes | milestone | 0h | 2012-03-16 09:30 | 2012-03-16 09:30 | 381 | 11.62d |  |  |
| 383 | 1.8.6.7 | **Our Products** |  | 0.88d | 2012-03-15 13:00 | 2012-03-16 11:00 |  | 11.44d |  | 7h |
| 384 | 1.8.6.7.1 | Translate Creative Assets |  | 1h | 2012-03-15 13:00 | 2012-03-15 14:00 |  | 11.44d | 0d | 1h |
| 385 | 1.8.6.7.2 | Architecture & Design | milestone | 0h | 2012-03-15 14:00 | 2012-03-15 14:00 | 384 | 11.44d | 0d |  |
| 386 | 1.8.6.7.3 | User Interface Implementation |  | 2h | 2012-03-15 14:00 | 2012-03-15 16:00 | 385 | 11.44d | 0d | 2h |
| 387 | 1.8.6.7.4 | User Experience Implementation |  | 1h | 2012-03-15 16:00 | 2012-03-15 17:00 | 386 | 11.44d | 0d | 1h |
| 388 | 1.8.6.7.5 | CMS Implementation |  | 1h | 2012-03-16 08:00 | 2012-03-16 09:00 | 387 | 11.44d | 0d | 1h |
| 389 | 1.8.6.7.6 | Analytics Implementation | milestone | 0h | 2012-03-16 09:00 | 2012-03-16 09:00 | 388 | 11.44d | 0d |  |
| 390 | 1.8.6.7.7 | Globalization |  | 1h | 2012-03-16 09:00 | 2012-03-16 10:00 | 389 | 11.44d | 0d | 1h |
| 391 | 1.8.6.7.8 | Code Review | milestone | 0h | 2012-03-16 10:00 | 2012-03-16 10:00 | 390 | 11.44d | 0d |  |
| 392 | 1.8.6.7.9 | Unit Testing |  | 1h | 2012-03-16 10:00 | 2012-03-16 11:00 | 391 | 11.44d | 0d | 1h |
| 393 | 1.8.6.7.10 | Integration Testing | milestone | 0h | 2012-03-16 11:00 | 2012-03-16 11:00 | 392 | 11.44d | 0d |  |
| 394 | 1.8.6.7.11 | QA / Bug Fixes | milestone | 0h | 2012-03-16 11:00 | 2012-03-16 11:00 | 393 | 11.44d |  |  |

| ID | WBS | Task | Type | Duration | Start | Finish | Predecessors | Total slack | Free slack | Work |
| --- | --- | --- | --- | --- | --- | --- | --- | --- | --- | --- |
| 395 | 1.8.6.8 | **Account Creation** |  | 0.94d | 2012-03-15 13:00 | 2012-03-16 11:30 |  | 11.38d |  | 7.5h |
| 396 | 1.8.6.8.1 | Translate Creative Assets |  | 1h | 2012-03-15 13:00 | 2012-03-15 14:00 |  | 11.38d | 0d | 1h |
| 397 | 1.8.6.8.2 | Architecture & Design | milestone | 0h | 2012-03-15 14:00 | 2012-03-15 14:00 | 396 | 11.38d | 0d |  |
| 398 | 1.8.6.8.3 | User Interface Implementation |  | 1.5h | 2012-03-15 14:00 | 2012-03-15 15:30 | 397 | 11.38d | 0d | 1.5h |
| 399 | 1.8.6.8.4 | User Experience Implementation |  | 1.5h | 2012-03-15 15:30 | 2012-03-15 17:00 | 398 | 11.38d | 0d | 1.5h |
| 400 | 1.8.6.8.5 | CMS Implementation |  | 1h | 2012-03-16 08:00 | 2012-03-16 09:00 | 399 | 11.38d | 0d | 1h |
| 401 | 1.8.6.8.6 | Analytics Implementation |  | 0.5h | 2012-03-16 09:00 | 2012-03-16 09:30 | 400 | 11.38d | 0d | 0.5h |
| 402 | 1.8.6.8.7 | Globalization |  | 1h | 2012-03-16 09:30 | 2012-03-16 10:30 | 401 | 11.38d | 0d | 1h |
| 403 | 1.8.6.8.8 | Code Review | milestone | 0h | 2012-03-16 10:30 | 2012-03-16 10:30 | 402 | 11.38d | 0d |  |
| 404 | 1.8.6.8.9 | Unit Testing |  | 1h | 2012-03-16 10:30 | 2012-03-16 11:30 | 403 | 11.38d | 0d | 1h |
| 405 | 1.8.6.8.10 | Integration Testing | milestone | 0h | 2012-03-16 11:30 | 2012-03-16 11:30 | 404 | 11.38d | 0d |  |
| 406 | 1.8.6.8.11 | QA / Bug Fixes | milestone | 0h | 2012-03-16 11:30 | 2012-03-16 11:30 | 405 | 11.38d |  |  |
| 407 | 1.8.6.9 | **Reset Password** |  | 0.75d | 2012-03-15 13:00 | 2012-03-16 10:00 |  | 11.56d |  | 6h |
| 408 | 1.8.6.9.1 | Translate Creative Assets |  | 1h | 2012-03-15 13:00 | 2012-03-15 14:00 |  | 11.56d | 0d | 1h |
| 409 | 1.8.6.9.2 | Architecture & Design | milestone | 0h | 2012-03-15 14:00 | 2012-03-15 14:00 | 408 | 11.56d | 0d |  |
| 410 | 1.8.6.9.3 | User Interface Implementation |  | 1h | 2012-03-15 14:00 | 2012-03-15 15:00 | 409 | 11.56d | 0d | 1h |
| 411 | 1.8.6.9.4 | User Experience Implementation |  | 0.5h | 2012-03-15 15:00 | 2012-03-15 15:30 | 410 | 11.56d | 0d | 0.5h |
| 412 | 1.8.6.9.5 | CMS Implementation |  | 1h | 2012-03-15 15:30 | 2012-03-15 16:30 | 411 | 11.56d | 0d | 1h |
| 413 | 1.8.6.9.6 | Analytics Implementation |  | 1h | 2012-03-15 16:30 | 2012-03-16 08:30 | 412 | 11.56d | 0d | 1h |
| 414 | 1.8.6.9.7 | Globalization |  | 1h | 2012-03-16 08:30 | 2012-03-16 09:30 | 413 | 11.56d | 0d | 1h |
| 415 | 1.8.6.9.8 | Code Review | milestone | 0h | 2012-03-16 09:30 | 2012-03-16 09:30 | 414 | 11.56d | 0d |  |
| 416 | 1.8.6.9.9 | Unit Testing |  | 0.5h | 2012-03-16 09:30 | 2012-03-16 10:00 | 415 | 11.56d | 0d | 0.5h |
| 417 | 1.8.6.9.10 | Integration Testing | milestone | 0h | 2012-03-16 10:00 | 2012-03-16 10:00 | 416 | 11.56d | 0d |  |
| 418 | 1.8.6.9.11 | QA / Bug Fixes | milestone | 0h | 2012-03-16 10:00 | 2012-03-16 10:00 | 417 | 11.56d |  |  |

| ID | WBS | Task | Type | Duration | Start | Finish | Predecessors | Total slack | Free slack | Work |
| --- | --- | --- | --- | --- | --- | --- | --- | --- | --- | --- |
| 419 | 1.8.6.10 | **News Landing** |  | 0.69d | 2012-03-15 13:00 | 2012-03-16 09:30 |  | 11.62d |  | 5.5h |
| 420 | 1.8.6.10.1 | Translate Creative Assets |  | 1h | 2012-03-15 13:00 | 2012-03-15 14:00 |  | 11.62d | 0d | 1h |
| 421 | 1.8.6.10.2 | Architecture & Design | milestone | 0h | 2012-03-15 14:00 | 2012-03-15 14:00 | 420 | 11.62d | 0d |  |
| 422 | 1.8.6.10.3 | User Interface Implementation |  | 1h | 2012-03-15 14:00 | 2012-03-15 15:00 | 421 | 11.62d | 0d | 1h |
| 423 | 1.8.6.10.4 | User Experience Implementation |  | 0.5h | 2012-03-15 15:00 | 2012-03-15 15:30 | 422 | 11.62d | 0d | 0.5h |
| 424 | 1.8.6.10.5 | CMS Implementation |  | 1h | 2012-03-15 15:30 | 2012-03-15 16:30 | 423 | 11.62d | 0d | 1h |
| 425 | 1.8.6.10.6 | Analytics Implementation |  | 0.5h | 2012-03-15 16:30 | 2012-03-15 17:00 | 424 | 11.62d | 0d | 0.5h |
| 426 | 1.8.6.10.7 | Globalization |  | 1h | 2012-03-16 08:00 | 2012-03-16 09:00 | 425 | 11.62d | 0d | 1h |
| 427 | 1.8.6.10.8 | Code Review | milestone | 0h | 2012-03-16 09:00 | 2012-03-16 09:00 | 426 | 11.62d | 0d |  |
| 428 | 1.8.6.10.9 | Unit Testing |  | 0.5h | 2012-03-16 09:00 | 2012-03-16 09:30 | 427 | 11.62d | 0d | 0.5h |
| 429 | 1.8.6.10.10 | Integration Testing | milestone | 0h | 2012-03-16 09:30 | 2012-03-16 09:30 | 428 | 11.62d | 0d |  |
| 430 | 1.8.6.10.11 | QA / Bug Fixes | milestone | 0h | 2012-03-16 09:30 | 2012-03-16 09:30 | 429 | 11.62d |  |  |
| 431 | 1.8.6.11 | **FAQs** |  | 0.75d | 2012-03-15 13:00 | 2012-03-16 10:00 |  | 11.56d |  | 6h |
| 432 | 1.8.6.11.1 | Translate Creative Assets |  | 1h | 2012-03-15 13:00 | 2012-03-15 14:00 |  | 11.56d | 0d | 1h |
| 433 | 1.8.6.11.2 | Architecture & Design | milestone | 0h | 2012-03-15 14:00 | 2012-03-15 14:00 | 432 | 11.56d | 0d |  |
| 434 | 1.8.6.11.3 | User Interface Implementation |  | 1.5h | 2012-03-15 14:00 | 2012-03-15 15:30 | 433 | 11.56d | 0d | 1.5h |
| 435 | 1.8.6.11.4 | User Experience Implementation |  | 0.5h | 2012-03-15 15:30 | 2012-03-15 16:00 | 434 | 11.56d | 0d | 0.5h |
| 436 | 1.8.6.11.5 | CMS Implementation |  | 1h | 2012-03-15 16:00 | 2012-03-15 17:00 | 435 | 11.56d | 0d | 1h |
| 437 | 1.8.6.11.6 | Analytics Implementation |  | 0.5h | 2012-03-16 08:00 | 2012-03-16 08:30 | 436 | 11.56d | 0d | 0.5h |
| 438 | 1.8.6.11.7 | Globalization |  | 1h | 2012-03-16 08:30 | 2012-03-16 09:30 | 437 | 11.56d | 0d | 1h |
| 439 | 1.8.6.11.8 | Code Review | milestone | 0h | 2012-03-16 09:30 | 2012-03-16 09:30 | 438 | 11.56d | 0d |  |
| 440 | 1.8.6.11.9 | Unit Testing |  | 0.5h | 2012-03-16 09:30 | 2012-03-16 10:00 | 439 | 11.56d | 0d | 0.5h |
| 441 | 1.8.6.11.10 | Integration Testing | milestone | 0h | 2012-03-16 10:00 | 2012-03-16 10:00 | 440 | 11.56d | 0d |  |
| 442 | 1.8.6.11.11 | QA / Bug Fixes | milestone | 0h | 2012-03-16 10:00 | 2012-03-16 10:00 | 441 | 11.56d |  |  |

Notes:
- 431: ·The page is a single page of content managed through the CMS. / ·There are no data requirements associated with FAQ items, they are managed as content for the page.

| ID | WBS | Task | Type | Duration | Start | Finish | Predecessors | Total slack | Free slack | Work |
| --- | --- | --- | --- | --- | --- | --- | --- | --- | --- | --- |
| 443 | 1.8.6.12 | **Associations and Certifications** |  | 0.75d | 2012-03-15 13:00 | 2012-03-16 10:00 |  | 11.56d |  | 6h |
| 444 | 1.8.6.12.1 | Translate Creative Assets |  | 1h | 2012-03-15 13:00 | 2012-03-15 14:00 |  | 11.56d | 0d | 1h |
| 445 | 1.8.6.12.2 | Architecture & Design | milestone | 0h | 2012-03-15 14:00 | 2012-03-15 14:00 | 444 | 11.56d | 0d |  |
| 446 | 1.8.6.12.3 | User Interface Implementation |  | 1.5h | 2012-03-15 14:00 | 2012-03-15 15:30 | 445 | 11.56d | 0d | 1.5h |
| 447 | 1.8.6.12.4 | User Experience Implementation |  | 0.5h | 2012-03-15 15:30 | 2012-03-15 16:00 | 446 | 11.56d | 0d | 0.5h |
| 448 | 1.8.6.12.5 | CMS Implementation |  | 1h | 2012-03-15 16:00 | 2012-03-15 17:00 | 447 | 11.56d | 0d | 1h |
| 449 | 1.8.6.12.6 | Analytics Implementation |  | 0.5h | 2012-03-16 08:00 | 2012-03-16 08:30 | 448 | 11.56d | 0d | 0.5h |
| 450 | 1.8.6.12.7 | Globalization |  | 1h | 2012-03-16 08:30 | 2012-03-16 09:30 | 449 | 11.56d | 0d | 1h |
| 451 | 1.8.6.12.8 | Code Review | milestone | 0h | 2012-03-16 09:30 | 2012-03-16 09:30 | 450 | 11.56d | 0d |  |
| 452 | 1.8.6.12.9 | Unit Testing |  | 0.5h | 2012-03-16 09:30 | 2012-03-16 10:00 | 451 | 11.56d | 0d | 0.5h |
| 453 | 1.8.6.12.10 | Integration Testing | milestone | 0h | 2012-03-16 10:00 | 2012-03-16 10:00 | 452 | 11.56d | 0d |  |
| 454 | 1.8.6.12.11 | QA / Bug Fixes | milestone | 0h | 2012-03-16 10:00 | 2012-03-16 10:00 | 453 | 11.56d |  |  |
| 455 | 1.8.6.13 | **Promotion Landing** |  | 0.75d | 2012-03-15 13:00 | 2012-03-16 10:00 |  | 11.56d |  | 6h |
| 456 | 1.8.6.13.1 | Translate Creative Assets |  | 1h | 2012-03-15 13:00 | 2012-03-15 14:00 |  | 11.56d | 0d | 1h |
| 457 | 1.8.6.13.2 | Architecture & Design | milestone | 0h | 2012-03-15 14:00 | 2012-03-15 14:00 | 456 | 11.56d | 0d |  |
| 458 | 1.8.6.13.3 | User Interface Implementation |  | 1.5h | 2012-03-15 14:00 | 2012-03-15 15:30 | 457 | 11.56d | 0d | 1.5h |
| 459 | 1.8.6.13.4 | User Experience Implementation |  | 0.5h | 2012-03-15 15:30 | 2012-03-15 16:00 | 458 | 11.56d | 0d | 0.5h |
| 460 | 1.8.6.13.5 | CMS Implementation |  | 1h | 2012-03-15 16:00 | 2012-03-15 17:00 | 459 | 11.56d | 0d | 1h |
| 461 | 1.8.6.13.6 | Analytics Implementation |  | 0.5h | 2012-03-16 08:00 | 2012-03-16 08:30 | 460 | 11.56d | 0d | 0.5h |
| 462 | 1.8.6.13.7 | Globalization |  | 1h | 2012-03-16 08:30 | 2012-03-16 09:30 | 461 | 11.56d | 0d | 1h |
| 463 | 1.8.6.13.8 | Code Review | milestone | 0h | 2012-03-16 09:30 | 2012-03-16 09:30 | 462 | 11.56d | 0d |  |
| 464 | 1.8.6.13.9 | Unit Testing |  | 0.5h | 2012-03-16 09:30 | 2012-03-16 10:00 | 463 | 11.56d | 0d | 0.5h |
| 465 | 1.8.6.13.10 | Integration Testing | milestone | 0h | 2012-03-16 10:00 | 2012-03-16 10:00 | 464 | 11.56d | 0d |  |
| 466 | 1.8.6.13.11 | QA / Bug Fixes | milestone | 0h | 2012-03-16 10:00 | 2012-03-16 10:00 | 465 | 11.56d |  |  |

| ID | WBS | Task | Type | Duration | Start | Finish | Predecessors | Total slack | Free slack | Work |
| --- | --- | --- | --- | --- | --- | --- | --- | --- | --- | --- |
| 467 | 1.8.6.14 | **Environmental Practices** |  | 0.69d | 2012-03-15 13:00 | 2012-03-16 09:30 |  | 11.62d |  | 5.5h |
| 468 | 1.8.6.14.1 | Translate Creative Assets |  | 1h | 2012-03-15 13:00 | 2012-03-15 14:00 |  | 11.62d | 0d | 1h |
| 469 | 1.8.6.14.2 | Architecture & Design | milestone | 0h | 2012-03-15 14:00 | 2012-03-15 14:00 | 468 | 11.62d | 0d |  |
| 470 | 1.8.6.14.3 | User Interface Implementation |  | 1h | 2012-03-15 14:00 | 2012-03-15 15:00 | 469 | 11.62d | 0d | 1h |
| 471 | 1.8.6.14.4 | User Experience Implementation |  | 0.5h | 2012-03-15 15:00 | 2012-03-15 15:30 | 470 | 11.62d | 0d | 0.5h |
| 472 | 1.8.6.14.5 | CMS Implementation |  | 1h | 2012-03-15 15:30 | 2012-03-15 16:30 | 471 | 11.62d | 0d | 1h |
| 473 | 1.8.6.14.6 | Analytics Implementation |  | 0.5h | 2012-03-15 16:30 | 2012-03-15 17:00 | 472 | 11.62d | 0d | 0.5h |
| 474 | 1.8.6.14.7 | Globalization |  | 1h | 2012-03-16 08:00 | 2012-03-16 09:00 | 473 | 11.62d | 0d | 1h |
| 475 | 1.8.6.14.8 | Code Review | milestone | 0h | 2012-03-16 09:00 | 2012-03-16 09:00 | 474 | 11.62d | 0d |  |
| 476 | 1.8.6.14.9 | Unit Testing |  | 0.5h | 2012-03-16 09:00 | 2012-03-16 09:30 | 475 | 11.62d | 0d | 0.5h |
| 477 | 1.8.6.14.10 | Integration Testing | milestone | 0h | 2012-03-16 09:30 | 2012-03-16 09:30 | 476 | 11.62d | 0d |  |
| 478 | 1.8.6.14.11 | QA / Bug Fixes | milestone | 0h | 2012-03-16 09:30 | 2012-03-16 09:30 | 477 | 11.62d |  |  |
| 479 | 1.8.6.15 | **Widget Home** |  | 0.69d | 2012-03-15 13:00 | 2012-03-16 09:30 |  | 11.62d |  | 5.5h |
| 480 | 1.8.6.15.1 | Translate Creative Assets |  | 1h | 2012-03-15 13:00 | 2012-03-15 14:00 |  | 11.62d | 0d | 1h |
| 481 | 1.8.6.15.2 | Architecture & Design | milestone | 0h | 2012-03-15 14:00 | 2012-03-15 14:00 | 480 | 11.62d | 0d |  |
| 482 | 1.8.6.15.3 | User Interface Implementation |  | 1h | 2012-03-15 14:00 | 2012-03-15 15:00 | 481 | 11.62d | 0d | 1h |
| 483 | 1.8.6.15.4 | User Experience Implementation |  | 0.5h | 2012-03-15 15:00 | 2012-03-15 15:30 | 482 | 11.62d | 0d | 0.5h |
| 484 | 1.8.6.15.5 | CMS Implementation |  | 1h | 2012-03-15 15:30 | 2012-03-15 16:30 | 483 | 11.62d | 0d | 1h |
| 485 | 1.8.6.15.6 | Analytics Implementation |  | 0.5h | 2012-03-15 16:30 | 2012-03-15 17:00 | 484 | 11.62d | 0d | 0.5h |
| 486 | 1.8.6.15.7 | Globalization |  | 1h | 2012-03-16 08:00 | 2012-03-16 09:00 | 485 | 11.62d | 0d | 1h |
| 487 | 1.8.6.15.8 | Code Review | milestone | 0h | 2012-03-16 09:00 | 2012-03-16 09:00 | 486 | 11.62d | 0d |  |
| 488 | 1.8.6.15.9 | Unit Testing |  | 0.5h | 2012-03-16 09:00 | 2012-03-16 09:30 | 487 | 11.62d | 0d | 0.5h |
| 489 | 1.8.6.15.10 | Integration Testing | milestone | 0h | 2012-03-16 09:30 | 2012-03-16 09:30 | 488 | 11.62d | 0d |  |
| 490 | 1.8.6.15.11 | QA / Bug Fixes | milestone | 0h | 2012-03-16 09:30 | 2012-03-16 09:30 | 489 | 11.62d |  |  |

| ID | WBS | Task | Type | Duration | Start | Finish | Predecessors | Total slack | Free slack | Work |
| --- | --- | --- | --- | --- | --- | --- | --- | --- | --- | --- |
| 491 | 1.8.6.16 | **Widget Benefits** |  | 0.69d | 2012-03-15 13:00 | 2012-03-16 09:30 |  | 11.62d |  | 5.5h |
| 492 | 1.8.6.16.1 | Translate Creative Assets |  | 1h | 2012-03-15 13:00 | 2012-03-15 14:00 |  | 11.62d | 0d | 1h |
| 493 | 1.8.6.16.2 | Architecture & Design | milestone | 0h | 2012-03-15 14:00 | 2012-03-15 14:00 | 492 | 11.62d | 0d |  |
| 494 | 1.8.6.16.3 | User Interface Implementation |  | 1h | 2012-03-15 14:00 | 2012-03-15 15:00 | 493 | 11.62d | 0d | 1h |
| 495 | 1.8.6.16.4 | User Experience Implementation |  | 0.5h | 2012-03-15 15:00 | 2012-03-15 15:30 | 494 | 11.62d | 0d | 0.5h |
| 496 | 1.8.6.16.5 | CMS Implementation |  | 1h | 2012-03-15 15:30 | 2012-03-15 16:30 | 495 | 11.62d | 0d | 1h |
| 497 | 1.8.6.16.6 | Analytics Implementation |  | 0.5h | 2012-03-15 16:30 | 2012-03-15 17:00 | 496 | 11.62d | 0d | 0.5h |
| 498 | 1.8.6.16.7 | Globalization |  | 1h | 2012-03-16 08:00 | 2012-03-16 09:00 | 497 | 11.62d | 0d | 1h |
| 499 | 1.8.6.16.8 | Code Review | milestone | 0h | 2012-03-16 09:00 | 2012-03-16 09:00 | 498 | 11.62d | 0d |  |
| 500 | 1.8.6.16.9 | Unit Testing |  | 0.5h | 2012-03-16 09:00 | 2012-03-16 09:30 | 499 | 11.62d | 0d | 0.5h |
| 501 | 1.8.6.16.10 | Integration Testing | milestone | 0h | 2012-03-16 09:30 | 2012-03-16 09:30 | 500 | 11.62d | 0d |  |
| 502 | 1.8.6.16.11 | QA / Bug Fixes | milestone | 0h | 2012-03-16 09:30 | 2012-03-16 09:30 | 501 | 11.62d |  |  |
| 503 | 1.8.6.17 | **Widget Sample Kits** |  | 0.69d | 2012-03-15 13:00 | 2012-03-16 09:30 |  | 11.62d |  | 5.5h |
| 504 | 1.8.6.17.1 | Translate Creative Assets |  | 1h | 2012-03-15 13:00 | 2012-03-15 14:00 |  | 11.62d | 0d | 1h |
| 505 | 1.8.6.17.2 | Architecture & Design | milestone | 0h | 2012-03-15 14:00 | 2012-03-15 14:00 | 504 | 11.62d | 0d |  |
| 506 | 1.8.6.17.3 | User Interface Implementation |  | 1h | 2012-03-15 14:00 | 2012-03-15 15:00 | 505 | 11.62d | 0d | 1h |
| 507 | 1.8.6.17.4 | User Experience Implementation |  | 0.5h | 2012-03-15 15:00 | 2012-03-15 15:30 | 506 | 11.62d | 0d | 0.5h |
| 508 | 1.8.6.17.5 | CMS Implementation |  | 1h | 2012-03-15 15:30 | 2012-03-15 16:30 | 507 | 11.62d | 0d | 1h |
| 509 | 1.8.6.17.6 | Analytics Implementation |  | 0.5h | 2012-03-15 16:30 | 2012-03-15 17:00 | 508 | 11.62d | 0d | 0.5h |
| 510 | 1.8.6.17.7 | Globalization |  | 1h | 2012-03-16 08:00 | 2012-03-16 09:00 | 509 | 11.62d | 0d | 1h |
| 511 | 1.8.6.17.8 | Code Review | milestone | 0h | 2012-03-16 09:00 | 2012-03-16 09:00 | 510 | 11.62d | 0d |  |
| 512 | 1.8.6.17.9 | Unit Testing |  | 0.5h | 2012-03-16 09:00 | 2012-03-16 09:30 | 511 | 11.62d | 0d | 0.5h |
| 513 | 1.8.6.17.10 | Integration Testing | milestone | 0h | 2012-03-16 09:30 | 2012-03-16 09:30 | 512 | 11.62d | 0d |  |
| 514 | 1.8.6.17.11 | QA / Bug Fixes | milestone | 0h | 2012-03-16 09:30 | 2012-03-16 09:30 | 513 | 11.62d |  |  |

| ID | WBS | Task | Type | Duration | Start | Finish | Predecessors | Total slack | Free slack | Work |
| --- | --- | --- | --- | --- | --- | --- | --- | --- | --- | --- |
| 515 | 1.8.6.18 | **Widget Custom Options** |  | 0.69d | 2012-03-15 13:00 | 2012-03-16 09:30 |  | 11.62d |  | 5.5h |
| 516 | 1.8.6.18.1 | Translate Creative Assets |  | 1h | 2012-03-15 13:00 | 2012-03-15 14:00 |  | 11.62d | 0d | 1h |
| 517 | 1.8.6.18.2 | Architecture & Design | milestone | 0h | 2012-03-15 14:00 | 2012-03-15 14:00 | 516 | 11.62d | 0d |  |
| 518 | 1.8.6.18.3 | User Interface Implementation |  | 1h | 2012-03-15 14:00 | 2012-03-15 15:00 | 517 | 11.62d | 0d | 1h |
| 519 | 1.8.6.18.4 | User Experience Implementation |  | 0.5h | 2012-03-15 15:00 | 2012-03-15 15:30 | 518 | 11.62d | 0d | 0.5h |
| 520 | 1.8.6.18.5 | CMS Implementation |  | 1h | 2012-03-15 15:30 | 2012-03-15 16:30 | 519 | 11.62d | 0d | 1h |
| 521 | 1.8.6.18.6 | Analytics Implementation |  | 0.5h | 2012-03-15 16:30 | 2012-03-15 17:00 | 520 | 11.62d | 0d | 0.5h |
| 522 | 1.8.6.18.7 | Globalization |  | 1h | 2012-03-16 08:00 | 2012-03-16 09:00 | 521 | 11.62d | 0d | 1h |
| 523 | 1.8.6.18.8 | Code Review | milestone | 0h | 2012-03-16 09:00 | 2012-03-16 09:00 | 522 | 11.62d | 0d |  |
| 524 | 1.8.6.18.9 | Unit Testing |  | 0.5h | 2012-03-16 09:00 | 2012-03-16 09:30 | 523 | 11.62d | 0d | 0.5h |
| 525 | 1.8.6.18.10 | Integration Testing | milestone | 0h | 2012-03-16 09:30 | 2012-03-16 09:30 | 524 | 11.62d | 0d |  |
| 526 | 1.8.6.18.11 | QA / Bug Fixes | milestone | 0h | 2012-03-16 09:30 | 2012-03-16 09:30 | 525 | 11.62d |  |  |
| 527 | 1.8.6.19 | **Pure Colors Warranty** |  | 0.69d | 2012-03-15 13:00 | 2012-03-16 09:30 |  | 11.62d |  | 5.5h |
| 528 | 1.8.6.19.1 | Translate Creative Assets |  | 1h | 2012-03-15 13:00 | 2012-03-15 14:00 |  | 11.62d | 0d | 1h |
| 529 | 1.8.6.19.2 | Architecture & Design | milestone | 0h | 2012-03-15 14:00 | 2012-03-15 14:00 | 528 | 11.62d | 0d |  |
| 530 | 1.8.6.19.3 | User Interface Implementation |  | 1h | 2012-03-15 14:00 | 2012-03-15 15:00 | 529 | 11.62d | 0d | 1h |
| 531 | 1.8.6.19.4 | User Experience Implementation |  | 0.5h | 2012-03-15 15:00 | 2012-03-15 15:30 | 530 | 11.62d | 0d | 0.5h |
| 532 | 1.8.6.19.5 | CMS Implementation |  | 1h | 2012-03-15 15:30 | 2012-03-15 16:30 | 531 | 11.62d | 0d | 1h |
| 533 | 1.8.6.19.6 | Analytics Implementation |  | 0.5h | 2012-03-15 16:30 | 2012-03-15 17:00 | 532 | 11.62d | 0d | 0.5h |
| 534 | 1.8.6.19.7 | Globalization |  | 1h | 2012-03-16 08:00 | 2012-03-16 09:00 | 533 | 11.62d | 0d | 1h |
| 535 | 1.8.6.19.8 | Code Review | milestone | 0h | 2012-03-16 09:00 | 2012-03-16 09:00 | 534 | 11.62d | 0d |  |
| 536 | 1.8.6.19.9 | Unit Testing |  | 0.5h | 2012-03-16 09:00 | 2012-03-16 09:30 | 535 | 11.62d | 0d | 0.5h |
| 537 | 1.8.6.19.10 | Integration Testing | milestone | 0h | 2012-03-16 09:30 | 2012-03-16 09:30 | 536 | 11.62d | 0d |  |
| 538 | 1.8.6.19.11 | QA / Bug Fixes | milestone | 0h | 2012-03-16 09:30 | 2012-03-16 09:30 | 537 | 11.62d |  |  |

| ID | WBS | Task | Type | Duration | Start | Finish | Predecessors | Total slack | Free slack | Work |
| --- | --- | --- | --- | --- | --- | --- | --- | --- | --- | --- |
| 539 | 1.8.6.20 | **Pure Colors Forms and Reference** |  | 0.69d | 2012-03-15 13:00 | 2012-03-16 09:30 |  | 11.62d |  | 5.5h |
| 540 | 1.8.6.20.1 | Translate Creative Assets |  | 1h | 2012-03-15 13:00 | 2012-03-15 14:00 |  | 11.62d | 0d | 1h |
| 541 | 1.8.6.20.2 | Architecture & Design | milestone | 0h | 2012-03-15 14:00 | 2012-03-15 14:00 | 540 | 11.62d | 0d |  |
| 542 | 1.8.6.20.3 | User Interface Implementation |  | 1h | 2012-03-15 14:00 | 2012-03-15 15:00 | 541 | 11.62d | 0d | 1h |
| 543 | 1.8.6.20.4 | User Experience Implementation |  | 0.5h | 2012-03-15 15:00 | 2012-03-15 15:30 | 542 | 11.62d | 0d | 0.5h |
| 544 | 1.8.6.20.5 | CMS Implementation |  | 1h | 2012-03-15 15:30 | 2012-03-15 16:30 | 543 | 11.62d | 0d | 1h |
| 545 | 1.8.6.20.6 | Analytics Implementation |  | 0.5h | 2012-03-15 16:30 | 2012-03-15 17:00 | 544 | 11.62d | 0d | 0.5h |
| 546 | 1.8.6.20.7 | Globalization |  | 1h | 2012-03-16 08:00 | 2012-03-16 09:00 | 545 | 11.62d | 0d | 1h |
| 547 | 1.8.6.20.8 | Code Review | milestone | 0h | 2012-03-16 09:00 | 2012-03-16 09:00 | 546 | 11.62d | 0d |  |
| 548 | 1.8.6.20.9 | Unit Testing |  | 0.5h | 2012-03-16 09:00 | 2012-03-16 09:30 | 547 | 11.62d | 0d | 0.5h |
| 549 | 1.8.6.20.10 | Integration Testing | milestone | 0h | 2012-03-16 09:30 | 2012-03-16 09:30 | 548 | 11.62d | 0d |  |
| 550 | 1.8.6.20.11 | QA / Bug Fixes | milestone | 0h | 2012-03-16 09:30 | 2012-03-16 09:30 | 549 | 11.62d |  |  |
| 551 | 1.8.6.21 | **Custom Error Page - Not Found (404)** |  | 0.44d | 2012-03-15 13:00 | 2012-03-15 16:30 |  | 11.88d |  | 3.5h |
| 552 | 1.8.6.21.1 | Translate Creative Assets |  | 0.5h | 2012-03-15 13:00 | 2012-03-15 13:30 |  | 11.88d | 0d | 0.5h |
| 553 | 1.8.6.21.2 | Architecture & Design | milestone | 0h | 2012-03-15 13:30 | 2012-03-15 13:30 | 552 | 11.88d | 0d |  |
| 554 | 1.8.6.21.3 | User Interface Implementation |  | 0.5h | 2012-03-15 13:30 | 2012-03-15 14:00 | 553 | 11.88d | 0d | 0.5h |
| 555 | 1.8.6.21.4 | User Experience Implementation | milestone | 0h | 2012-03-15 14:00 | 2012-03-15 14:00 | 554 | 11.88d | 0d |  |
| 556 | 1.8.6.21.5 | CMS Implementation |  | 1h | 2012-03-15 14:00 | 2012-03-15 15:00 | 555 | 11.88d | 0d | 1h |
| 557 | 1.8.6.21.6 | Analytics Implementation | milestone | 0h | 2012-03-15 15:00 | 2012-03-15 15:00 | 556 | 11.88d | 0d |  |
| 558 | 1.8.6.21.7 | Globalization |  | 1h | 2012-03-15 15:00 | 2012-03-15 16:00 | 557 | 11.88d | 0d | 1h |
| 559 | 1.8.6.21.8 | Code Review | milestone | 0h | 2012-03-15 16:00 | 2012-03-15 16:00 | 558 | 11.88d | 0d |  |
| 560 | 1.8.6.21.9 | Unit Testing |  | 0.5h | 2012-03-15 16:00 | 2012-03-15 16:30 | 559 | 11.88d | 0d | 0.5h |
| 561 | 1.8.6.21.10 | Integration Testing | milestone | 0h | 2012-03-15 16:30 | 2012-03-15 16:30 | 560 | 11.88d | 0d |  |
| 562 | 1.8.6.21.11 | QA / Bug Fixes | milestone | 0h | 2012-03-15 16:30 | 2012-03-15 16:30 | 561 | 11.88d |  |  |

| ID | WBS | Task | Type | Duration | Start | Finish | Predecessors | Total slack | Free slack | Work |
| --- | --- | --- | --- | --- | --- | --- | --- | --- | --- | --- |
| 563 | 1.8.6.22 | **Custom Error Page - Server Error (500)** |  | 0.44d | 2012-03-15 13:00 | 2012-03-15 16:30 |  | 11.88d |  | 3.5h |
| 564 | 1.8.6.22.1 | Translate Creative Assets |  | 0.5h | 2012-03-15 13:00 | 2012-03-15 13:30 |  | 11.88d | 0d | 0.5h |
| 565 | 1.8.6.22.2 | Architecture & Design | milestone | 0h | 2012-03-15 13:30 | 2012-03-15 13:30 | 564 | 11.88d | 0d |  |
| 566 | 1.8.6.22.3 | User Interface Implementation |  | 0.5h | 2012-03-15 13:30 | 2012-03-15 14:00 | 565 | 11.88d | 0d | 0.5h |
| 567 | 1.8.6.22.4 | User Experience Implementation | milestone | 0h | 2012-03-15 14:00 | 2012-03-15 14:00 | 566 | 11.88d | 0d |  |
| 568 | 1.8.6.22.5 | CMS Implementation |  | 1h | 2012-03-15 14:00 | 2012-03-15 15:00 | 567 | 11.88d | 0d | 1h |
| 569 | 1.8.6.22.6 | Analytics Implementation | milestone | 0h | 2012-03-15 15:00 | 2012-03-15 15:00 | 568 | 11.88d | 0d |  |
| 570 | 1.8.6.22.7 | Globalization |  | 1h | 2012-03-15 15:00 | 2012-03-15 16:00 | 569 | 11.88d | 0d | 1h |
| 571 | 1.8.6.22.8 | Code Review | milestone | 0h | 2012-03-15 16:00 | 2012-03-15 16:00 | 570 | 11.88d | 0d |  |
| 572 | 1.8.6.22.9 | Unit Testing |  | 0.5h | 2012-03-15 16:00 | 2012-03-15 16:30 | 571 | 11.88d | 0d | 0.5h |
| 573 | 1.8.6.22.10 | Integration Testing | milestone | 0h | 2012-03-15 16:30 | 2012-03-15 16:30 | 572 | 11.88d | 0d |  |
| 574 | 1.8.6.22.11 | QA / Bug Fixes | milestone | 0h | 2012-03-15 16:30 | 2012-03-15 16:30 | 573 | 11.88d |  |  |
| 575 | 1.8.7 | **Dynamic Pages** |  | 4.31d | 2012-03-15 13:00 | 2012-03-21 15:30 | 269, 270, 271, 286, 298 | 8d | 0d | 183.5h |
| 576 | 1.8.7.1 | **[CLIENT] For ...** |  | 1.19d | 2012-03-15 13:00 | 2012-03-16 14:30 |  | 11.12d |  | 9.5h |
| 577 | 1.8.7.1.1 | Translate Creative Assets |  | 1h | 2012-03-15 13:00 | 2012-03-15 14:00 |  | 11.12d | 0d | 1h |
| 578 | 1.8.7.1.2 | Architecture & Design |  | 0.5h | 2012-03-15 14:00 | 2012-03-15 14:30 | 577 | 11.12d | 0d | 0.5h |
| 579 | 1.8.7.1.3 | Dynamic Page Routing Implementation |  | 1h | 2012-03-15 14:30 | 2012-03-15 15:30 | 578 | 11.12d | 0d | 1h |
| 580 | 1.8.7.1.4 | Implement Dynamic Layout |  | 1h | 2012-03-15 15:30 | 2012-03-15 16:30 | 579 | 11.12d | 0d | 1h |
| 581 | 1.8.7.1.5 | User Experience Implementation |  | 1h | 2012-03-15 16:30 | 2012-03-16 08:30 | 580 | 11.12d | 0d | 1h |
| 582 | 1.8.7.1.6 | CMS Implementation |  | 2h | 2012-03-16 08:30 | 2012-03-16 10:30 | 581 | 11.12d | 0d | 2h |
| 583 | 1.8.7.1.7 | Analytics Implementation |  | 1h | 2012-03-16 10:30 | 2012-03-16 11:30 | 582 | 11.12d | 0d | 1h |
| 584 | 1.8.7.1.8 | Globalization |  | 1h | 2012-03-16 11:30 | 2012-03-16 13:30 | 583 | 11.12d | 0d | 1h |
| 585 | 1.8.7.1.9 | Code Review | milestone | 0h | 2012-03-16 13:30 | 2012-03-16 13:30 | 584 | 11.12d | 0d |  |
| 586 | 1.8.7.1.10 | Unit Testing |  | 1h | 2012-03-16 13:30 | 2012-03-16 14:30 | 585 | 11.12d | 0d | 1h |
| 587 | 1.8.7.1.11 | Integration Testing | milestone | 0h | 2012-03-16 14:30 | 2012-03-16 14:30 | 586 | 11.12d | 0d |  |
| 588 | 1.8.7.1.12 | QA / Bug Fixes | milestone | 0h | 2012-03-16 14:30 | 2012-03-16 14:30 | 587 | 11.12d |  |  |

Notes:
- 575: Many of these pages have not appeared in the wireframes, and therefore their contents are unknown. A high degree of inaccuracy should be expected for these items. / ·These pages have integration with data and/or CMS content. / ·These pages have more involved user experiences associated with them.
- 579: ·This task allows dynamic pages to react to the requested url patterns appearing to browsers and search engine crawlers to be independent pages on the site.
- 580: A single base layout exists for all "[CLIENT] For" audience pages.

| ID | WBS | Task | Type | Duration | Start | Finish | Predecessors | Total slack | Free slack | Work |
| --- | --- | --- | --- | --- | --- | --- | --- | --- | --- | --- |
| 589 | 1.8.7.2 | **Facet Landing** |  | 2.31d | 2012-03-15 13:00 | 2012-03-19 15:30 |  | 10d |  | 18.5h |
| 590 | 1.8.7.2.1 | Translate Creative Assets |  | 1.5h | 2012-03-15 13:00 | 2012-03-15 14:30 |  | 10d | 0d | 1.5h |
| 591 | 1.8.7.2.2 | Architecture & Design |  | 1.5h | 2012-03-15 14:30 | 2012-03-15 16:00 | 590 | 10d | 0d | 1.5h |
| 592 | 1.8.7.2.3 | Dynamic Page Routing Implementation |  | 1h | 2012-03-15 16:00 | 2012-03-15 17:00 | 591 | 10d | 0d | 1h |
| 593 | 1.8.7.2.4 | Implement Dynamic Layout |  | 3h | 2012-03-16 08:00 | 2012-03-16 11:00 | 592 | 10d | 0d | 3h |
| 594 | 1.8.7.2.5 | User Experience Implementation |  | 6h | 2012-03-16 11:00 | 2012-03-19 09:00 | 593 | 10d | 0d | 6h |
| 595 | 1.8.7.2.6 | CMS Implementation |  | 2h | 2012-03-19 09:00 | 2012-03-19 11:00 | 594 | 10d | 0d | 2h |
| 596 | 1.8.7.2.7 | Analytics Implementation |  | 0.5h | 2012-03-19 11:00 | 2012-03-19 11:30 | 595 | 10d | 0d | 0.5h |
| 597 | 1.8.7.2.8 | Globalization |  | 2h | 2012-03-19 11:30 | 2012-03-19 14:30 | 596 | 10d | 0d | 2h |
| 598 | 1.8.7.2.9 | Code Review | milestone | 0h | 2012-03-19 14:30 | 2012-03-19 14:30 | 597 | 10d | 0d |  |
| 599 | 1.8.7.2.10 | Unit Testing |  | 1h | 2012-03-19 14:30 | 2012-03-19 15:30 | 598 | 10d | 0d | 1h |
| 600 | 1.8.7.2.11 | Integration Testing | milestone | 0h | 2012-03-19 15:30 | 2012-03-19 15:30 | 599 | 10d | 0d |  |
| 601 | 1.8.7.2.12 | QA / Bug Fixes | milestone | 0h | 2012-03-19 15:30 | 2012-03-19 15:30 | 600 | 10d |  |  |
| 602 | 1.8.7.3 | **Category Landing** |  | 3.38d | 2012-03-15 13:00 | 2012-03-20 16:00 |  | 8.94d |  | 27h |
| 603 | 1.8.7.3.1 | Translate Creative Assets |  | 2h | 2012-03-15 13:00 | 2012-03-15 15:00 |  | 8.94d | 0d | 2h |
| 604 | 1.8.7.3.2 | Architecture & Design |  | 1.5h | 2012-03-15 15:00 | 2012-03-15 16:30 | 603 | 8.94d | 0d | 1.5h |
| 605 | 1.8.7.3.3 | Dynamic Page Routing Implementation |  | 1h | 2012-03-15 16:30 | 2012-03-16 08:30 | 604 | 8.94d | 0d | 1h |
| 606 | 1.8.7.3.4 | Implement Dynamic Layout |  | 4h | 2012-03-16 08:30 | 2012-03-16 13:30 | 605 | 8.94d | 0d | 4h |
| 607 | 1.8.7.3.5 | User Experience Implementation |  | 12h | 2012-03-16 13:30 | 2012-03-20 08:30 | 606 | 8.94d | 0d | 12h |
| 608 | 1.8.7.3.6 | CMS Implementation |  | 2h | 2012-03-20 08:30 | 2012-03-20 10:30 | 607 | 8.94d | 0d | 2h |
| 609 | 1.8.7.3.7 | Analytics Implementation | milestone | 0h | 2012-03-20 10:30 | 2012-03-20 10:30 | 608 | 8.94d | 0d |  |
| 610 | 1.8.7.3.8 | Globalization |  | 2h | 2012-03-20 10:30 | 2012-03-20 13:30 | 609 | 8.94d | 0d | 2h |
| 611 | 1.8.7.3.9 | Code Review |  | 0.5h | 2012-03-20 13:30 | 2012-03-20 14:00 | 610 | 8.94d | 0d | 0.5h |
| 612 | 1.8.7.3.10 | Unit Testing |  | 2h | 2012-03-20 14:00 | 2012-03-20 16:00 | 611 | 8.94d | 0d | 2h |
| 613 | 1.8.7.3.11 | Integration Testing | milestone | 0h | 2012-03-20 16:00 | 2012-03-20 16:00 | 612 | 8.94d | 0d |  |
| 614 | 1.8.7.3.12 | QA / Bug Fixes | milestone | 0h | 2012-03-20 16:00 | 2012-03-20 16:00 | 613 | 8.94d |  |  |

Notes:
- 589: ·There will always be a category in context for this page. / ·The category will be used as the base filter for products; faceted drill-in will apply to category products.
- 592: ·This task allows dynamic pages to react to the requested url patterns appearing to browsers and search engine crawlers to be independent pages on the site.
- 593: ·A single base layout exists for all facet pages.
- 602: ·Facet summary may or may not be displayed for a given category, depending on its configuration. / ·If no facet summary information is displayed, a product listing will be displayed. / ·Clicking a facet will remove any facet summary information and present product listings. / ·Clearing all facets will return to the default view.
- 605: ·This task allows dynamic pages to react to the requested url patterns appearing to browsers and search engine crawlers to be independent pages on the site.
- 606: ·A single base layout exists for all category pages.

| ID | WBS | Task | Type | Duration | Start | Finish | Predecessors | Total slack | Free slack | Work |
| --- | --- | --- | --- | --- | --- | --- | --- | --- | --- | --- |
| 615 | 1.8.7.4 | **Learn About Topic** |  | 1.19d | 2012-03-15 13:00 | 2012-03-16 14:30 |  | 11.12d |  | 9.5h |
| 616 | 1.8.7.4.1 | Translate Creative Assets |  | 1h | 2012-03-15 13:00 | 2012-03-15 14:00 |  | 11.12d | 0d | 1h |
| 617 | 1.8.7.4.2 | Architecture & Design |  | 0.5h | 2012-03-15 14:00 | 2012-03-15 14:30 | 616 | 11.12d | 0d | 0.5h |
| 618 | 1.8.7.4.3 | Dynamic Page Routing Implementation |  | 1h | 2012-03-15 14:30 | 2012-03-15 15:30 | 617 | 11.12d | 0d | 1h |
| 619 | 1.8.7.4.4 | Implement Dynamic Layout |  | 1h | 2012-03-15 15:30 | 2012-03-15 16:30 | 618 | 11.12d | 0d | 1h |
| 620 | 1.8.7.4.5 | User Experience Implementation |  | 1h | 2012-03-15 16:30 | 2012-03-16 08:30 | 619 | 11.12d | 0d | 1h |
| 621 | 1.8.7.4.6 | CMS Implementation |  | 2h | 2012-03-16 08:30 | 2012-03-16 10:30 | 620 | 11.12d | 0d | 2h |
| 622 | 1.8.7.4.7 | Analytics Implementation |  | 1h | 2012-03-16 10:30 | 2012-03-16 11:30 | 621 | 11.12d | 0d | 1h |
| 623 | 1.8.7.4.8 | Globalization |  | 1h | 2012-03-16 11:30 | 2012-03-16 13:30 | 622 | 11.12d | 0d | 1h |
| 624 | 1.8.7.4.9 | Code Review | milestone | 0h | 2012-03-16 13:30 | 2012-03-16 13:30 | 623 | 11.12d | 0d |  |
| 625 | 1.8.7.4.10 | Unit Testing |  | 1h | 2012-03-16 13:30 | 2012-03-16 14:30 | 624 | 11.12d | 0d | 1h |
| 626 | 1.8.7.4.11 | Integration Testing | milestone | 0h | 2012-03-16 14:30 | 2012-03-16 14:30 | 625 | 11.12d | 0d |  |
| 627 | 1.8.7.4.12 | QA / Bug Fixes | milestone | 0h | 2012-03-16 14:30 | 2012-03-16 14:30 | 626 | 11.12d |  |  |
| 628 | 1.8.7.5 | **Widget Collection Landing** |  | 1.19d | 2012-03-15 13:00 | 2012-03-16 14:30 |  | 11.12d |  | 9.5h |
| 629 | 1.8.7.5.1 | Translate Creative Assets |  | 1h | 2012-03-15 13:00 | 2012-03-15 14:00 |  | 11.12d | 0d | 1h |
| 630 | 1.8.7.5.2 | Architecture & Design |  | 0.5h | 2012-03-15 14:00 | 2012-03-15 14:30 | 629 | 11.12d | 0d | 0.5h |
| 631 | 1.8.7.5.3 | Dynamic Page Routing Implementation |  | 1h | 2012-03-15 14:30 | 2012-03-15 15:30 | 630 | 11.12d | 0d | 1h |
| 632 | 1.8.7.5.4 | Implement Dynamic Layout |  | 1h | 2012-03-15 15:30 | 2012-03-15 16:30 | 631 | 11.12d | 0d | 1h |
| 633 | 1.8.7.5.5 | User Experience Implementation |  | 1h | 2012-03-15 16:30 | 2012-03-16 08:30 | 632 | 11.12d | 0d | 1h |
| 634 | 1.8.7.5.6 | CMS Implementation |  | 2h | 2012-03-16 08:30 | 2012-03-16 10:30 | 633 | 11.12d | 0d | 2h |
| 635 | 1.8.7.5.7 | Analytics Implementation |  | 1h | 2012-03-16 10:30 | 2012-03-16 11:30 | 634 | 11.12d | 0d | 1h |
| 636 | 1.8.7.5.8 | Globalization |  | 1h | 2012-03-16 11:30 | 2012-03-16 13:30 | 635 | 11.12d | 0d | 1h |
| 637 | 1.8.7.5.9 | Code Review | milestone | 0h | 2012-03-16 13:30 | 2012-03-16 13:30 | 636 | 11.12d | 0d |  |
| 638 | 1.8.7.5.10 | Unit Testing |  | 1h | 2012-03-16 13:30 | 2012-03-16 14:30 | 637 | 11.12d | 0d | 1h |
| 639 | 1.8.7.5.11 | Integration Testing | milestone | 0h | 2012-03-16 14:30 | 2012-03-16 14:30 | 638 | 11.12d | 0d |  |
| 640 | 1.8.7.5.12 | QA / Bug Fixes | milestone | 0h | 2012-03-16 14:30 | 2012-03-16 14:30 | 639 | 11.12d |  |  |

Notes:
- 618: ·This task allows dynamic pages to react to the requested url patterns appearing to browsers and search engine crawlers to be independent pages on the site.
- 619: A single base layout exists for all topic pages.
- 631: ·This task allows dynamic pages to react to the requested url patterns appearing to browsers and search engine crawlers to be independent pages on the site.
- 632: A single base layout exists for all collection pages.

| ID | WBS | Task | Type | Duration | Start | Finish | Predecessors | Total slack | Free slack | Work |
| --- | --- | --- | --- | --- | --- | --- | --- | --- | --- | --- |
| 641 | 1.8.7.6 | **Careers** |  | 1.06d | 2012-03-15 13:00 | 2012-03-16 13:30 |  | 11.25d |  | 8.5h |
| 642 | 1.8.7.6.1 | Translate Creative Assets |  | 1h | 2012-03-15 13:00 | 2012-03-15 14:00 |  | 11.25d | 0d | 1h |
| 643 | 1.8.7.6.2 | Architecture & Design | milestone | 0h | 2012-03-15 14:00 | 2012-03-15 14:00 | 642 | 11.25d | 0d |  |
| 644 | 1.8.7.6.3 | User Interface Implementation |  | 2h | 2012-03-15 14:00 | 2012-03-15 16:00 | 643 | 11.25d | 0d | 2h |
| 645 | 1.8.7.6.4 | User Experience Implementation |  | 1h | 2012-03-15 16:00 | 2012-03-15 17:00 | 644 | 11.25d | 0d | 1h |
| 646 | 1.8.7.6.5 | CMS Implementation |  | 2h | 2012-03-16 08:00 | 2012-03-16 10:00 | 645 | 11.25d | 0d | 2h |
| 647 | 1.8.7.6.6 | Analytics Implementation |  | 0.5h | 2012-03-16 10:00 | 2012-03-16 10:30 | 646 | 11.25d | 0d | 0.5h |
| 648 | 1.8.7.6.7 | Globalization |  | 1h | 2012-03-16 10:30 | 2012-03-16 11:30 | 647 | 11.25d | 0d | 1h |
| 649 | 1.8.7.6.8 | Code Review | milestone | 0h | 2012-03-16 11:30 | 2012-03-16 11:30 | 648 | 11.25d | 0d |  |
| 650 | 1.8.7.6.9 | Unit Testing |  | 1h | 2012-03-16 11:30 | 2012-03-16 13:30 | 649 | 11.25d | 0d | 1h |
| 651 | 1.8.7.6.10 | Integration Testing | milestone | 0h | 2012-03-16 13:30 | 2012-03-16 13:30 | 650 | 11.25d | 0d |  |
| 652 | 1.8.7.6.11 | QA / Bug Fixes | milestone | 0h | 2012-03-16 13:30 | 2012-03-16 13:30 | 651 | 11.25d |  |  |
| 653 | 1.8.7.7 | **Product Details** |  | 4.31d | 2012-03-15 13:00 | 2012-03-21 15:30 |  | 8d |  | 34.5h |
| 654 | 1.8.7.7.1 | Translate Creative Assets |  | 2h | 2012-03-15 13:00 | 2012-03-15 15:00 |  | 8d | 0d | 2h |
| 655 | 1.8.7.7.2 | Architecture & Design |  | 2h | 2012-03-15 15:00 | 2012-03-15 17:00 | 654 | 8d | 0d | 2h |
| 656 | 1.8.7.7.3 | User Interface Implementation |  | 6h | 2012-03-16 08:00 | 2012-03-16 15:00 | 655 | 8d | 0d | 6h |
| 657 | 1.8.7.7.4 | User Experience Implementation |  | 16h | 2012-03-16 15:00 | 2012-03-20 15:00 | 656 | 8d | 0d | 16h |
| 658 | 1.8.7.7.5 | CMS Implementation |  | 2h | 2012-03-20 15:00 | 2012-03-20 17:00 | 657 | 8d | 0d | 2h |
| 659 | 1.8.7.7.6 | Analytics Implementation |  | 0.5h | 2012-03-21 08:00 | 2012-03-21 08:30 | 658 | 8d | 0d | 0.5h |
| 660 | 1.8.7.7.7 | Globalization |  | 2h | 2012-03-21 08:30 | 2012-03-21 10:30 | 659 | 8d | 0d | 2h |
| 661 | 1.8.7.7.8 | Code Review | milestone | 0h | 2012-03-21 10:30 | 2012-03-21 10:30 | 660 | 8d | 0d |  |
| 662 | 1.8.7.7.9 | Unit Testing |  | 3h | 2012-03-21 10:30 | 2012-03-21 14:30 | 661 | 8d | 0d | 3h |
| 663 | 1.8.7.7.10 | Integration Testing |  | 1h | 2012-03-21 14:30 | 2012-03-21 15:30 | 662 | 8d | 0d | 1h |
| 664 | 1.8.7.7.11 | QA / Bug Fixes | milestone | 0h | 2012-03-21 15:30 | 2012-03-21 15:30 | 663 | 8d |  |  |

Notes:
- 653: ·Heavy integration with product data - core product database access or feed is required / ·Adding a product to an order will invoke a transition to the ordering subsystem. / ·The attributes displayed for a product will vary depending on the product. / ·The attributes for each product will be defined up-front and are not administratively configurable.

| ID | WBS | Task | Type | Duration | Start | Finish | Predecessors | Total slack | Free slack | Work |
| --- | --- | --- | --- | --- | --- | --- | --- | --- | --- | --- |
| 665 | 1.8.7.8 | **Product Listing** |  | 3.44d | 2012-03-15 13:00 | 2012-03-20 16:30 |  | 8.88d |  | 27.5h |
| 666 | 1.8.7.8.1 | Translate Creative Assets |  | 2h | 2012-03-15 13:00 | 2012-03-15 15:00 |  | 8.88d | 0d | 2h |
| 667 | 1.8.7.8.2 | Architecture & Design |  | 3h | 2012-03-15 15:00 | 2012-03-16 09:00 | 666 | 8.88d | 0d | 3h |
| 668 | 1.8.7.8.3 | User Interface Implementation |  | 6h | 2012-03-16 09:00 | 2012-03-16 16:00 | 667 | 8.88d | 0d | 6h |
| 669 | 1.8.7.8.4 | User Experience Implementation |  | 10h | 2012-03-16 16:00 | 2012-03-20 09:00 | 668 | 8.88d | 0d | 10h |
| 670 | 1.8.7.8.5 | CMS Implementation |  | 2h | 2012-03-20 09:00 | 2012-03-20 11:00 | 669 | 8.88d | 0d | 2h |
| 671 | 1.8.7.8.6 | Analytics Implementation |  | 0.5h | 2012-03-20 11:00 | 2012-03-20 11:30 | 670 | 8.88d | 0d | 0.5h |
| 672 | 1.8.7.8.7 | Globalization |  | 1h | 2012-03-20 11:30 | 2012-03-20 13:30 | 671 | 8.88d | 0d | 1h |
| 673 | 1.8.7.8.8 | Code Review | milestone | 0h | 2012-03-20 13:30 | 2012-03-20 13:30 | 672 | 8.88d | 0d |  |
| 674 | 1.8.7.8.9 | Unit Testing |  | 3h | 2012-03-20 13:30 | 2012-03-20 16:30 | 673 | 8.88d | 0d | 3h |
| 675 | 1.8.7.8.10 | Integration Testing | milestone | 0h | 2012-03-20 16:30 | 2012-03-20 16:30 | 674 | 8.88d | 0d |  |
| 676 | 1.8.7.8.11 | QA / Bug Fixes | milestone | 0h | 2012-03-20 16:30 | 2012-03-20 16:30 | 675 | 8.88d |  |  |
| 677 | 1.8.7.9 | **Inspiration Gallery Landing Page** |  | 2.44d | 2012-03-15 13:00 | 2012-03-19 16:30 |  | 9.88d |  | 19.5h |
| 678 | 1.8.7.9.1 | Translate Creative Assets |  | 1h | 2012-03-15 13:00 | 2012-03-15 14:00 |  | 9.88d | 0d | 1h |
| 679 | 1.8.7.9.2 | Architecture & Design |  | 1h | 2012-03-15 14:00 | 2012-03-15 15:00 | 678 | 9.88d | 0d | 1h |
| 680 | 1.8.7.9.3 | User Interface Implementation |  | 4h | 2012-03-15 15:00 | 2012-03-16 10:00 | 679 | 9.88d | 0d | 4h |
| 681 | 1.8.7.9.4 | User Experience Implementation |  | 6h | 2012-03-16 10:00 | 2012-03-16 17:00 | 680 | 9.88d | 0d | 6h |
| 682 | 1.8.7.9.5 | CMS Implementation |  | 2h | 2012-03-19 08:00 | 2012-03-19 10:00 | 681 | 9.88d | 0d | 2h |
| 683 | 1.8.7.9.6 | Analytics Implementation |  | 0.5h | 2012-03-19 10:00 | 2012-03-19 10:30 | 682 | 9.88d | 0d | 0.5h |
| 684 | 1.8.7.9.7 | Globalization |  | 2h | 2012-03-19 10:30 | 2012-03-19 13:30 | 683 | 9.88d | 0d | 2h |
| 685 | 1.8.7.9.8 | Code Review | milestone | 0h | 2012-03-19 13:30 | 2012-03-19 13:30 | 684 | 9.88d | 0d |  |
| 686 | 1.8.7.9.9 | Unit Testing |  | 2h | 2012-03-19 13:30 | 2012-03-19 15:30 | 685 | 9.88d | 0d | 2h |
| 687 | 1.8.7.9.10 | Integration Testing |  | 1h | 2012-03-19 15:30 | 2012-03-19 16:30 | 686 | 9.88d | 0d | 1h |
| 688 | 1.8.7.9.11 | QA / Bug Fixes | milestone | 0h | 2012-03-19 16:30 | 2012-03-19 16:30 | 687 | 9.88d |  |  |

Notes:
- 665: ·Will be shared among the pages that display product search results. / ·Will encapsulate the core functionality for faceted drill-down filtering. / ·Will allow return context to be specified, allowing for display of context-appropriate "return" link.
- 677: ·A gallery will always be in context. A default will be established. / ·Free text search will be applied to products in the gallery. / ·Free text search will be driven by the search engine. / ·Free text search will match against all product attributes.

| ID | WBS | Task | Type | Duration | Start | Finish | Predecessors | Total slack | Free slack | Work |
| --- | --- | --- | --- | --- | --- | --- | --- | --- | --- | --- |
| 689 | 1.8.7.10 | **Inspiration Gallery Details Page** |  | 2.44d | 2012-03-15 13:00 | 2012-03-19 16:30 |  | 9.88d |  | 19.5h |
| 690 | 1.8.7.10.1 | Translate Creative Assets |  | 1h | 2012-03-15 13:00 | 2012-03-15 14:00 |  | 9.88d | 0d | 1h |
| 691 | 1.8.7.10.2 | Architecture & Design |  | 1h | 2012-03-15 14:00 | 2012-03-15 15:00 | 690 | 9.88d | 0d | 1h |
| 692 | 1.8.7.10.3 | User Interface Implementation |  | 4h | 2012-03-15 15:00 | 2012-03-16 10:00 | 691 | 9.88d | 0d | 4h |
| 693 | 1.8.7.10.4 | User Experience Implementation |  | 6h | 2012-03-16 10:00 | 2012-03-16 17:00 | 692 | 9.88d | 0d | 6h |
| 694 | 1.8.7.10.5 | CMS Implementation |  | 2h | 2012-03-19 08:00 | 2012-03-19 10:00 | 693 | 9.88d | 0d | 2h |
| 695 | 1.8.7.10.6 | Analytics Implementation |  | 0.5h | 2012-03-19 10:00 | 2012-03-19 10:30 | 694 | 9.88d | 0d | 0.5h |
| 696 | 1.8.7.10.7 | Globalization |  | 2h | 2012-03-19 10:30 | 2012-03-19 13:30 | 695 | 9.88d | 0d | 2h |
| 697 | 1.8.7.10.8 | Code Review | milestone | 0h | 2012-03-19 13:30 | 2012-03-19 13:30 | 696 | 9.88d | 0d |  |
| 698 | 1.8.7.10.9 | Unit Testing |  | 2h | 2012-03-19 13:30 | 2012-03-19 15:30 | 697 | 9.88d | 0d | 2h |
| 699 | 1.8.7.10.10 | Integration Testing |  | 1h | 2012-03-19 15:30 | 2012-03-19 16:30 | 698 | 9.88d | 0d | 1h |
| 700 | 1.8.7.10.11 | QA / Bug Fixes | milestone | 0h | 2012-03-19 16:30 | 2012-03-19 16:30 | 699 | 9.88d |  |  |
| 701 | 1.8.8 | Unit Testing |  | 40h | 2012-03-21 15:30 | 2012-03-28 15:30 | 269, 270, 271, 286, 298, 310, 575 | 8d | 0d | 40h |
| 702 | 1.8.9 | Integration Testing |  | 40h | 2012-03-28 15:30 | 2012-04-04 15:30 | 269, 270, 271, 286, 298, 310, 575, 701 | 8d | 0d | 40h |
| 703 | 1.8.10 | QA / Bug Fixes |  | 40h | 2012-04-04 15:30 | 2012-04-11 15:30 | 702, 269, 270, 271, 286, 298, 310, 575 | 8d |  | 40h |
| 704 | 1.9 | **Administration Website** |  | 21.12d | 2012-03-23 14:30 | 2012-04-23 15:30 | 2, 35, 68, 110, 151, 169 | 0d |  | 236h |
| 705 | 1.9.1 | **User Login and Audit Profile** |  | 0.25d | 2012-03-23 14:30 | 2012-03-23 16:30 |  | 0d |  | 2h |
| 706 | 1.9.1.1 | Architecture & Design | milestone | 0h | 2012-03-23 14:30 | 2012-03-23 14:30 |  | 0d |  |  |
| 707 | 1.9.1.2 | Database Implementation | milestone | 0h | 2012-03-23 14:30 | 2012-03-23 14:30 | 706 | 0d |  |  |
| 708 | 1.9.1.3 | Implementation |  | 2h | 2012-03-23 14:30 | 2012-03-23 16:30 | 707 | 0d |  | 2h |
| 709 | 1.9.1.4 | Code Review | milestone | 0h | 2012-03-23 16:30 | 2012-03-23 16:30 | 708 | 0d |  |  |
| 710 | 1.9.1.5 | Unit Testing | milestone | 0h | 2012-03-23 16:30 | 2012-03-23 16:30 | 709 | 0d |  |  |
| 711 | 1.9.1.6 | Integration Testing | milestone | 0h | 2012-03-23 16:30 | 2012-03-23 16:30 | 710 | 0d |  |  |
| 712 | 1.9.1.7 | QA / Bug Fixes | milestone | 0h | 2012-03-23 16:30 | 2012-03-23 16:30 | 711 | 0d |  |  |

Notes:
- 689: ·The slide show will automatically play when entering the page. / ·When a user clicks on an individual frame of the slide show, it will automatically pause. / ·Full-screen toggle will not be implemented.
- 704: ·The administration website will be English only. / ·User accounts will be driven from the [Client] Active Directory credentials. / ·No user roles will be implemented; if a user has access to the system they may perform all actions. / ·Content changes have no associated workflow or approval chain. / ·Content changes are immediate; content is not scheduled nor does it expire. / ·No means for promotion of content between environments is provided. / ·There will be no formal UI requirements. / ·The interface and experience are at the discretion of the developers. / ·The site will attempt to conform to UI/UX practices and the overall presentation of the marketing site.

| ID | WBS | Task | Type | Duration | Start | Finish | Predecessors | Total slack | Free slack | Work |
| --- | --- | --- | --- | --- | --- | --- | --- | --- | --- | --- |
| 713 | 1.9.2 | **Shared Page Layouts and Assets** |  | 1.88d | 2012-03-23 16:30 | 2012-03-27 15:30 | 705 | 0d |  | 15h |
| 714 | 1.9.2.1 | Architecture & Design |  | 2h | 2012-03-23 16:30 | 2012-03-26 09:30 |  | 0d |  | 2h |
| 715 | 1.9.2.2 | User Interface Implementation |  | 2h | 2012-03-26 09:30 | 2012-03-26 11:30 | 714 | 0d |  | 2h |
| 716 | 1.9.2.3 | User Experience Implementation |  | 2h | 2012-03-26 11:30 | 2012-03-26 14:30 | 715 | 0d |  | 2h |
| 717 | 1.9.2.4 | Baseline Server-Side Architecture Implementation |  | 4h | 2012-03-26 14:30 | 2012-03-27 09:30 | 716 | 0d |  | 4h |
| 718 | 1.9.2.5 | CMS Implementation |  | 2h | 2012-03-27 09:30 | 2012-03-27 11:30 | 717 | 0d |  | 2h |
| 719 | 1.9.2.6 | Globalization | milestone | 0h | 2012-03-27 11:30 | 2012-03-27 11:30 | 718 | 0d |  |  |
| 720 | 1.9.2.7 | Code Review | milestone | 0h | 2012-03-27 11:30 | 2012-03-27 11:30 | 719 | 0d |  |  |
| 721 | 1.9.2.8 | Unit Testing |  | 2h | 2012-03-27 11:30 | 2012-03-27 14:30 | 720 | 0d |  | 2h |
| 722 | 1.9.2.9 | Integration Testing |  | 1h | 2012-03-27 14:30 | 2012-03-27 15:30 | 721 | 0d |  | 1h |
| 723 | 1.9.2.10 | QA / Bug Fixes | milestone | 0h | 2012-03-27 15:30 | 2012-03-27 15:30 | 722 | 0d |  |  |
| 724 | 1.9.3 | **Dynamic Page Support** |  | 1.38d | 2012-03-23 14:30 | 2012-03-27 08:30 |  | 16.75d | 0d | 11h |
| 725 | 1.9.3.1 | Architecture & Design |  | 2h | 2012-03-23 14:30 | 2012-03-23 16:30 |  | 16.75d | 0d | 2h |
| 726 | 1.9.3.2 | User Interface Implementation |  | 1h | 2012-03-23 16:30 | 2012-03-26 08:30 | 725 | 16.75d | 0d | 1h |
| 727 | 1.9.3.3 | User Experience Implementation |  | 1h | 2012-03-26 08:30 | 2012-03-26 09:30 | 726 | 16.75d | 0d | 1h |
| 728 | 1.9.3.4 | Baseline Server-Side Architecture Implementation |  | 2h | 2012-03-26 09:30 | 2012-03-26 11:30 | 727 | 16.75d | 0d | 2h |
| 729 | 1.9.3.5 | CMS Implementation |  | 2h | 2012-03-26 11:30 | 2012-03-26 14:30 | 728 | 16.75d | 0d | 2h |
| 730 | 1.9.3.6 | Code Review | milestone | 0h | 2012-03-26 14:30 | 2012-03-26 14:30 | 729 | 16.75d | 0d |  |
| 731 | 1.9.3.7 | Unit Testing |  | 2h | 2012-03-26 14:30 | 2012-03-26 16:30 | 730 | 16.75d | 0d | 2h |
| 732 | 1.9.3.8 | Integration Testing |  | 1h | 2012-03-26 16:30 | 2012-03-27 08:30 | 731 | 16.75d | 0d | 1h |
| 733 | 1.9.3.9 | QA / Bug Fixes | milestone | 0h | 2012-03-27 08:30 | 2012-03-27 08:30 | 732 | 16.75d |  |  |
| 734 | 1.9.4 | **Action Items Management** |  | 3d | 2012-03-27 08:30 | 2012-03-30 08:30 | 724 | 16.75d |  | 24h |
| 735 | 1.9.4.1 | Architecture & Design |  | 2h | 2012-03-27 08:30 | 2012-03-27 10:30 |  | 16.75d | 0d | 2h |
| 736 | 1.9.4.2 | User Interface Implementation |  | 6h | 2012-03-27 10:30 | 2012-03-28 08:30 | 735 | 16.75d | 0d | 6h |
| 737 | 1.9.4.3 | User Experience Implementation |  | 4h | 2012-03-28 08:30 | 2012-03-28 13:30 | 736 | 16.75d | 0d | 4h |
| 738 | 1.9.4.4 | Baseline Server-Side Architecture Implementation |  | 4h | 2012-03-28 13:30 | 2012-03-29 08:30 | 737 | 16.75d | 0d | 4h |
| 739 | 1.9.4.5 | CMS Implementation |  | 2h | 2012-03-29 08:30 | 2012-03-29 10:30 | 738 | 16.75d | 0d | 2h |
| 740 | 1.9.4.6 | Code Review | milestone | 0h | 2012-03-29 10:30 | 2012-03-29 10:30 | 739 | 16.75d | 0d |  |
| 741 | 1.9.4.7 | Unit Testing |  | 4h | 2012-03-29 10:30 | 2012-03-29 15:30 | 740 | 16.75d | 0d | 4h |
| 742 | 1.9.4.8 | Integration Testing |  | 2h | 2012-03-29 15:30 | 2012-03-30 08:30 | 741 | 16.75d | 0d | 2h |
| 743 | 1.9.4.9 | QA / Bug Fixes | milestone | 0h | 2012-03-30 08:30 | 2012-03-30 08:30 | 742 | 16.75d |  |  |

Notes:
- 713: This item includes - / ·Shared page layouts / ·Shared style sheets / ·Shared scripts
- 724: This item includes the infrastructure to support pages that are dynamically created in the CMS which did not appear in the initial wireframes.
- 734: This item includes - / ·Ability to review action items, with items pending action in an in-box like display. / ·Ability to perform context sensitive light workflow operations against action items.

| ID | WBS | Task | Type | Duration | Start | Finish | Predecessors | Total slack | Free slack | Work |
| --- | --- | --- | --- | --- | --- | --- | --- | --- | --- | --- |
| 744 | 1.9.5 | **Category Taxonomy Management** |  | 2.25d | 2012-03-27 15:30 | 2012-03-30 08:30 | 705, 713 | 0d |  | 18h |
| 745 | 1.9.5.1 | Architecture & Design |  | 2h | 2012-03-27 15:30 | 2012-03-28 08:30 |  | 0d |  | 2h |
| 746 | 1.9.5.2 | User Interface Implementation |  | 4h | 2012-03-28 08:30 | 2012-03-28 13:30 | 745 | 0d |  | 4h |
| 747 | 1.9.5.3 | User Experience Implementation |  | 7h | 2012-03-28 13:30 | 2012-03-29 11:30 | 746 | 0d |  | 7h |
| 748 | 1.9.5.4 | CMS Implementation |  | 2h | 2012-03-29 11:30 | 2012-03-29 14:30 | 747 | 0d |  | 2h |
| 749 | 1.9.5.5 | Code Review | milestone | 0h | 2012-03-29 14:30 | 2012-03-29 14:30 | 748 | 0d |  |  |
| 750 | 1.9.5.6 | Unit Testing |  | 2h | 2012-03-29 14:30 | 2012-03-29 16:30 | 749 | 0d |  | 2h |
| 751 | 1.9.5.7 | Integration Testing |  | 1h | 2012-03-29 16:30 | 2012-03-30 08:30 | 750 | 0d |  | 1h |
| 752 | 1.9.5.8 | QA / Bug Fixes | milestone | 0h | 2012-03-30 08:30 | 2012-03-30 08:30 | 751 | 0d |  |  |
| 753 | 1.9.6 | **Facet Management** |  | 2d | 2012-03-27 15:30 | 2012-03-29 15:30 | 705, 713 | 0.25d |  | 16h |
| 754 | 1.9.6.1 | Architecture & Design |  | 1h | 2012-03-27 15:30 | 2012-03-27 16:30 |  | 0.25d | 0d | 1h |
| 755 | 1.9.6.2 | User Interface Implementation |  | 3h | 2012-03-27 16:30 | 2012-03-28 10:30 | 754 | 0.25d | 0d | 3h |
| 756 | 1.9.6.3 | User Experience Implementation |  | 5h | 2012-03-28 10:30 | 2012-03-28 16:30 | 755 | 0.25d | 0d | 5h |
| 757 | 1.9.6.4 | Code Review | milestone | 0h | 2012-03-28 16:30 | 2012-03-28 16:30 | 756 | 0.25d | 0d |  |
| 758 | 1.9.6.5 | CMS Implementation |  | 4h | 2012-03-28 16:30 | 2012-03-29 11:30 | 757 | 0.25d | 0d | 4h |
| 759 | 1.9.6.6 | Unit Testing |  | 2h | 2012-03-29 11:30 | 2012-03-29 14:30 | 758 | 0.25d | 0d | 2h |
| 760 | 1.9.6.7 | Integration Testing |  | 1h | 2012-03-29 14:30 | 2012-03-29 15:30 | 759 | 0.25d | 0d | 1h |
| 761 | 1.9.6.8 | QA / Bug Fixes | milestone | 0h | 2012-03-29 15:30 | 2012-03-29 15:30 | 760 | 0.25d |  |  |
| 762 | 1.9.7 | **Product Management** |  | 4.75d | 2012-03-30 08:30 | 2012-04-05 15:30 | 705, 713, 744, 753 | 0d |  | 38h |
| 763 | 1.9.7.1 | Architecture & Design |  | 4h | 2012-03-30 08:30 | 2012-03-30 13:30 |  | 0d |  | 4h |
| 764 | 1.9.7.2 | User Interface Implementation |  | 8h | 2012-03-30 13:30 | 2012-04-02 13:30 | 763 | 0d |  | 8h |
| 765 | 1.9.7.3 | User Experience Implementation |  | 16h | 2012-04-02 13:30 | 2012-04-04 13:30 | 764 | 0d |  | 16h |
| 766 | 1.9.7.4 | CMS Implementation |  | 4h | 2012-04-04 13:30 | 2012-04-05 08:30 | 765 | 0d |  | 4h |
| 767 | 1.9.7.5 | Code Review | milestone | 0h | 2012-04-05 08:30 | 2012-04-05 08:30 | 766 | 0d |  |  |
| 768 | 1.9.7.6 | Unit Testing |  | 4h | 2012-04-05 08:30 | 2012-04-05 13:30 | 767 | 0d |  | 4h |
| 769 | 1.9.7.7 | Integration Testing |  | 2h | 2012-04-05 13:30 | 2012-04-05 15:30 | 768 | 0d |  | 2h |
| 770 | 1.9.7.8 | QA / Bug Fixes | milestone | 0h | 2012-04-05 15:30 | 2012-04-05 15:30 | 769 | 0d |  |  |

Notes:
- 762: This item includes all areas of management associated with a product. These areas are - / ·Mark or unmark product for search engine publish. / ·Assign arbitrary product attributes as name/value combinations. / ·Assign categories. / ·Assign facet values. / ·Assign merchandising tags. / ·Assign technical specification notes. / ·Assign inspiration gallery rooms. / ·Assign inspiration gallery design styles. / ·Assign images. / ·Assign sort order. / ·Associate similar products. / ·Associate coordinating products.

| ID | WBS | Task | Type | Duration | Start | Finish | Predecessors | Total slack | Free slack | Work |
| --- | --- | --- | --- | --- | --- | --- | --- | --- | --- | --- |
| 771 | 1.9.8 | **Inspiration Gallery Management** |  | 2d | 2012-03-30 08:30 | 2012-04-03 08:30 | 705, 713, 744, 753 | 2.75d |  | 16h |
| 772 | 1.9.8.1 | Architecture & Design |  | 2h | 2012-03-30 08:30 | 2012-03-30 10:30 |  | 2.75d | 0d | 2h |
| 773 | 1.9.8.2 | User Interface Implementation |  | 4h | 2012-03-30 10:30 | 2012-03-30 15:30 | 772 | 2.75d | 0d | 4h |
| 774 | 1.9.8.3 | User Experience Implementation |  | 4h | 2012-03-30 15:30 | 2012-04-02 10:30 | 773 | 2.75d | 0d | 4h |
| 775 | 1.9.8.4 | CMS Implementation |  | 4h | 2012-04-02 10:30 | 2012-04-02 15:30 | 774 | 2.75d | 0d | 4h |
| 776 | 1.9.8.5 | Code Review | milestone | 0h | 2012-04-02 15:30 | 2012-04-02 15:30 | 775 | 2.75d | 0d |  |
| 777 | 1.9.8.6 | Unit Testing |  | 2h | 2012-04-02 15:30 | 2012-04-03 08:30 | 776 | 2.75d | 0d | 2h |
| 778 | 1.9.8.7 | Integration Testing | milestone | 0h | 2012-04-03 08:30 | 2012-04-03 08:30 | 777 | 2.75d | 0d |  |
| 779 | 1.9.8.8 | QA / Bug Fixes | milestone | 0h | 2012-04-03 08:30 | 2012-04-03 08:30 | 778 | 2.75d |  |  |
| 780 | 1.9.9 | Unit Testing |  | 32h | 2012-04-05 15:30 | 2012-04-11 15:30 | 705, 713, 744, 753, 762, 771 | 0d |  | 32h |
| 781 | 1.9.10 | Integration Testing |  | 32h | 2012-04-11 15:30 | 2012-04-17 15:30 | 780, 705, 713, 744, 753, 762, 771 | 0d |  | 32h |
| 782 | 1.9.11 | QA / Bug Fixes |  | 32h | 2012-04-17 15:30 | 2012-04-23 15:30 | 781, 705, 713, 744, 753, 762, 771, 780 | 0d |  | 32h |
| 783 | 1.10 | **Product Feed Job** |  | 6.5d | 2012-03-23 14:30 | 2012-04-03 09:30 | 2, 68, 169 | 14.62d |  | 52h |
| 784 | 1.10.1 | Architecture & Design |  | 4h | 2012-03-23 14:30 | 2012-03-26 09:30 |  | 14.62d | 0d | 4h |
| 785 | 1.10.2 | Database Implementation |  | 10h | 2012-03-26 09:30 | 2012-03-27 11:30 | 784 | 14.62d | 0d | 10h |
| 786 | 1.10.3 | CMS Implementation |  | 4h | 2012-03-27 11:30 | 2012-03-27 16:30 | 785 | 14.62d | 0d | 4h |
| 787 | 1.10.4 | Implementation |  | 24h | 2012-03-27 16:30 | 2012-03-30 16:30 | 786 | 14.62d | 0d | 24h |
| 788 | 1.10.5 | Unit Testing |  | 4h | 2012-03-30 16:30 | 2012-04-02 11:30 | 787 | 14.62d | 0d | 4h |
| 789 | 1.10.6 | Integration Testing |  | 2h | 2012-04-02 11:30 | 2012-04-02 14:30 | 788 | 14.62d | 0d | 2h |
| 790 | 1.10.7 | QA / Bug Fixes |  | 4h | 2012-04-02 14:30 | 2012-04-03 09:30 | 789 | 14.62d |  | 4h |
| 791 | 1.11 | **NON-SEQUENTIAL ITEMS** |  | 3d? | 2012-04-23 15:30 | 2012-04-26 15:30 | 2, 35, 68, 110, 151, 169, 268, 704, 783 | 0d |  | 40h |
| 792 | 1.11.1 | Ad-Hoc Code Reviews |  | 16h | 2012-04-23 15:30 | 2012-04-25 15:30 |  | 0d |  | 16h |
| 793 | 1.11.2 | Merge Assistance |  | 8h | 2012-04-23 15:30 | 2012-04-24 15:30 |  | 1d |  | 16h |
| 794 | 1.11.3 | Go Live Support |  | 8h | 2012-04-25 15:30 | 2012-04-26 15:30 | 2, 35, 68, 110, 151, 169, 258, 268, 704, 783, 792, 793 | 0d |  | 8h |
| 795 | 1.11.4 | Post Launch Application Support | milestone | 0h | 2012-04-26 15:30 | 2012-04-26 15:30 | 794 | 0d |  |  |

Notes:
- 771: This item includes all areas of management associated with a inspiration galleries. These areas are - / ·Assign attributes. / ·Assign images. / ·Associate products.
- 783: There is no existing job service framework in the [CLIENT] Environment....
- 792: [CLIENT] will be performing ad-hoc code reviews at their discretion.
- 793: ·Work is being done concurrently in multiple feature branches that need to be integrated. / ·[CLIENT] is responsible for performing the merges and will enlist [DEVELOPER] assistance as required.
- 795: Post-Launch application support will be performed via change request.

| ID | WBS | Task | Type | Duration | Start | Finish | Total slack |
| --- | --- | --- | --- | --- | --- | --- | --- |
| 797 | 1.12 | **ADDITIONAL ASSUMPTIONS** |  | 1d? | 2012-02-03 08:00 | 2012-02-03 17:00 | 58.81d |
| 798 | 1.12.1 | This is an at-risk estimate. Please review the notes for additional details. | milestone | 0h | 2012-02-03 08:00 | 2012-02-03 08:00 | 59.81d |
| 799 | 1.12.2 | **Development Environment** |  | 8h? | 2012-02-03 08:00 | 2012-02-03 17:00 | 58.81d |
| 800 | 1.12.2.1 | [CLIENT] will be providing dedicated server environments for development, test, and production. The setup and hosting of any server hardware or software will be owned, maintained, and performed by the [CLIENT] IT group. | milestone | 0h | 2012-02-03 08:00 | 2012-02-03 08:00 | 59.81d |
| 801 | 1.12.2.2 | The test environment will be utilized for QA and user acceptance testing and will be considered a semi-stable environment in which the underlying data and code will be updated with consideration given to non-disruption of testing activities. | milestone | 0h | 2012-02-03 08:00 | 2012-02-03 08:00 | 59.81d |
| 802 | 1.12.2.3 | The development environment will be considered an unstable environment at all times, in which the underlying data and code may be changed without regard for disruption of any users of the system. | milestone | 0h | 2012-02-03 08:00 | 2012-02-03 08:00 | 59.81d |
| 803 | 1.12.2.4 | Builds to the development environment, both database and web, may be performed by any member of the [CLIENT] or [DEVELOPER] development teams; the teams are responsible for coordinating between themselves to ensure minimal impact to one another. | milestone | 0h | 2012-02-03 08:00 | 2012-02-03 08:00 | 59.81d |
| 804 | 1.12.2.5 | [DEVELOPER] will follow the documented standards for development as provided by the [CLIENT] development team and will attempt to follow the architectural patterns that [CLIENT] has established in the shared solution. | milestone | 0h | 2012-02-03 08:00 | 2012-02-03 08:00 | 59.81d |
| 805 | 1.12.2.6 | Outside of the aforementioned standard and pattern constraints, [DEVELOPER] is free to develop as they believe is best for the success of this project with an eye towards adherence to commonly accepted best practices. | milestone | 0h | 2012-02-03 08:00 | 2012-02-03 08:00 | 59.81d |
| 806 | 1.12.2.7 | Development will be performed in the existing [CLIENT] solution and in a dedicated feature branch. Changes made to the solution in the mainline trunk will be integrated into the feature branch regularly and frequently. | milestone | 0h | 2012-02-03 08:00 | 2012-02-03 08:00 | 59.81d |
| 807 | 1.12.2.8 | The [CLIENT] development team is responsible for performing all source control branch merges and will enlist [DEVELOPER] help for conflict resolution as needed. | milestone | 0h | 2012-02-03 08:00 | 2012-02-03 08:00 | 59.81d |
| 808 | 1.12.2.9 | Third party libraries and components that [DEVELOPER] wishes to use will be discussed with, and are subject to the approval of the [CLIENT] development team. | milestone | 0h | 2012-02-03 08:00 | 2012-02-03 08:00 | 59.81d |
| 809 | 1.12.2.10 | Where possible, the management and versioning of third party libraries used for development will be performed using the Microsoft NuGet package manager. | milestone | 0h | 2012-02-03 08:00 | 2012-02-03 08:00 | 59.81d |
| 810 | 1.12.2.11 | Where NuGet packages are not available, the libraries will be managed and versioned by hand and referenced from a library folder specific to the solution. |  | 8h? | 2012-02-03 08:00 | 2012-02-03 17:00 | 58.81d |
| 811 | 1.12.2.12 | It is assumed that the content management system exists in at least a rudimentary form in which the initial creative content can be implemented by the development teams. |  | 8h? | 2012-02-03 08:00 | 2012-02-03 17:00 | 58.81d |
| 812 | 1.12.3 | **Features** |  | 8h? | 2012-02-03 08:00 | 2012-02-03 17:00 | 58.81d |
| 813 | 1.12.3.1 | The marketing website will support a target resolution of 1024x768 for desktop versions of Internet Explorer v8.0-9.0, Firefox v8.0+, Chrome v15.0+, and Safari v5.1.1+. No explicit tablet or mobile device support is in scope at this time. |  | 8h? | 2012-02-03 08:00 | 2012-02-03 17:00 | 58.81d |
| 814 | 1.12.3.2 | The administrative website will support a target resolution of 1024x768 for desktop versions of Internet Explorer v9.0, Firefox v8.0+, and Chrome v15.0+. No explicit tablet or mobile device support is in scope at this time. |  | 8h? | 2012-02-03 08:00 | 2012-02-03 17:00 | 58.81d |
| 815 | 1.12.3.3 | The features that previously appeared within the content map and wireframes that were not explicitly discussed as being removed during the on-site meetings are still considered part of the phase one requirements. |  | 8h? | 2012-02-03 08:00 | 2012-02-03 17:00 | 58.81d |
| 816 | 1.12.3.4 | The blog referenced by the wireframes is an external piece of software with no user interface or direct data integration points. |  | 8h? | 2012-02-03 08:00 | 2012-02-03 17:00 | 58.81d |
| 817 | 1.12.3.5 | The various types of News items that appear on the marketing site will be created, managed, and controlled in the external blog software; items will be consumed via syndication feeds (RSS/ATOM) for specific categories. |  | 8h? | 2012-02-03 08:00 | 2012-02-03 17:00 | 58.81d |
| 818 | 1.12.3.6 | Browse and Search capabilities on the marketing website will be product-based, with results constrained to product data only. |  | 8h? | 2012-02-03 08:00 | 2012-02-03 17:00 | 58.81d |
| 819 | 1.12.3.7 | Account creation will be presented as a single online form that triggers the creation of both an online user and [CLIENT] customer account unless an existing customer account is referenced during signup in which case the new online user account will be li |  | 8h? | 2012-02-03 08:00 | 2012-02-03 17:00 | 58.81d |
| 820 | 1.12.3.8 | The My Account section of the marketing website is classified as part of the ordering subsystem, due to heavy integration with ordering data and workflow. As a result, the development responsibility for all of My Account belongs to the [CLIENT] developme |  | 8h? | 2012-02-03 08:00 | 2012-02-03 17:00 | 58.81d |
| 821 | 1.12.3.9 | The content management functionality will be provided by a third-party CMS software package. This package will offer both extension points and a well-documented API. |  | 8h? | 2012-02-03 08:00 | 2012-02-03 17:00 | 58.81d |
| 822 | 1.12.3.10 | CMS-driven content will be edited from within the CMS system using the default experience provided; no integration into the administrative website or facility for in-line editing of content within the marketing website will be provided. |  | 8h? | 2012-02-03 08:00 | 2012-02-03 17:00 | 58.81d |
| 823 | 1.12.3.11 | Preview of CMS content is the purview of the CMS system and will be provided using its default experience. No integration into the website or administrative website will be provided. |  | 8h? | 2012-02-03 08:00 | 2012-02-03 17:00 | 58.81d |
| 824 | 1.12.3.12 | Dynamic pages and taxonomy are managed through the CMS system; no support is offered for dynamic management of layouts within the administrative website. |  | 8h? | 2012-02-03 08:00 | 2012-02-03 17:00 | 58.81d |
| 825 | 1.12.3.13 | The content associated with the Pure Colors section has not yet been defined within the wireframes or content map. A content structure equivalent to the pages on the existing [CLIENT] website with each being CMS-driven content is assumed. |  | 8h? | 2012-02-03 08:00 | 2012-02-03 17:00 | 58.81d |
| 826 | 1.12.3.14 | The stand-alone assets, such as PDF forms, are assumed to exist in a location that is accessible to the marketing website and can be linked to directly without the need for intermediary code. |  | 8h? | 2012-02-03 08:00 | 2012-02-03 17:00 | 58.81d |

Notes:
- 798: At the time of this writing, the requirements for the application have not been fully defined resulting in significant gaps in understanding. The tasks and assumptions herein are based upon the on-site meeting notes, wireframes, and other materials available on 11/11/2011. The tasks, level of effort, and assumptions are expected to change as more details become known and may do so significantly. / The content map and wireframes have not yet been fully updated with the new requirements captured at the meeting and some new areas are undefined. In addition, no creative assets or user experience diagrams have yet been developed. All user interface and user experience areas should be considered inaccurate at best. / At the time of estimation, very little in the way of business rules associated with the data consumed by the marketing website or the resulting workflows which are associated with those rules have been captured. The risk exists that some of these items were unaccounted for or violate assumptions made within the estimate, which may have impact on both the level of effort and delivery timeline. / Please note that the estimate attempts to establish the overall level of effort required only; it does not attempt to perform scheduling nor provide an accurate timeline for delivery. As such, the column labeled "work" should be the focus of review, while the "duration" should be considered to have a high degree of inaccuracy.

| ID | WBS | Task | Duration | Start | Finish | Total slack |
| --- | --- | --- | --- | --- | --- | --- |
| 827 | 1.12.4 | **Out of Scope Items** | 8h? | 2012-02-03 08:00 | 2012-02-03 17:00 | 58.81d |
| 828 | 1.12.4.1 | The “My Site” concept that was discussed is out of scope for this phase of development. | 8h? | 2012-02-03 08:00 | 2012-02-03 17:00 | 58.81d |
| 829 | 1.12.4.2 | The testimonials concept referred to in the wireframes is out of scope for this phase of development, per discussions with Think Brownstone. | 8h? | 2012-02-03 08:00 | 2012-02-03 17:00 | 58.81d |
| 830 | 1.12.4.3 | Explicit support for mobile or tablet devices is out of scope at this time. | 8h? | 2012-02-03 08:00 | 2012-02-03 17:00 | 58.81d |
| 831 | 1.12.4.4 | Management of stand-alone assets, such as PDF forms. It is assumed that these items already exist within the [CLIENT] environment and are managed by an existing process. | 8h? | 2012-02-03 08:00 | 2012-02-03 17:00 | 58.81d |
| 832 | 1.12.4.5 | Automation of search engine configuration is out of scope. While support is offered for dynamic manipulation of facets at the product level which will flow into the search engine automatically, the changes needed to include new facets as part of the left | 8h? | 2012-02-03 08:00 | 2012-02-03 17:00 | 58.81d |
